# Comercial Juguetes Wingtip

Schedule from MS Project, 2005-01-03 to 2005-01-20, costs in €.
Calendario de producción de video
Southridge Video

## Calendars

- Estándar: Mon-Fri 08:00-12:00, 13:00-17:00; Sat-Sun off.

## Resources

| Resource | Unit | Rate | Notes |
| --- | --- | --- | --- |
| Garrett R. Vargas |  | 20 | Asistencia de Garret al Festival cinematográfico de la Costa Oeste los días 13 y 14 de enero; no estará disponible para trabajar en el proyecto. |
| Jim Hance |  | 18.75 |  |
| Scott Cooper |  | 19.37 |  |
| Jo Brown |  | 18.75 |  |
| Patti Mintz |  | 9.4 |  |
| Peter Kelly |  | 16.75 |  |
| John Rodman |  | 22 |  |
| Jonathan Mollerup |  | 10 |  |
| Jon Ganio |  | 15.5 |  |
| Electricista |  | 22 |  |
| Cámara de grabación Mini-DV |  | 6.25 |  |
| 600 vatios de luz y sonido |  | 2.5 |  |
| Kit reflector |  |  |  |
| Cámara Boom |  |  |  |
| Laboratorio Edición |  | 25 |  |
| Cinta de video | Cintas de 30-min | 5 |  |

## Schedule

| ID | WBS | Task | Type | Duration | Start | Finish | Predecessors | Total slack | Free slack | Resources | Work | Cost |
| --- | --- | --- | --- | --- | --- | --- | --- | --- | --- | --- | --- | --- |
| 1 | 1 | **Preproducción** |  | 8.5d | 2005-01-03 | 2005-01-13 |  | 0.8d | 0d |  | 168h | 2,631.7 |
| 2 | 1.1 | Revisar guión |  | 2.5d | 2005-01-03 | 2005-01-05 |  | 0.8d | 0d | Garrett R. Vargas; Scott Cooper | 40h | 787.5 |
| 3 | 1.2 | Reunir personal de producción |  | 3d | 2005-01-05 | 2005-01-10 | 2 | 0.8d | 0d | Garrett R. Vargas; Patti Mintz | 48h | 705.6 |
| 4 | 1.3 | Elegir lugares |  | 1d | 2005-01-10 | 2005-01-11 | 3 | 0.8d | 0d | Scott Cooper; Patti Mintz; Cinta de video [4 Cintas de 30-min] | 16h | 250.2 |
| 5 | 1.4 | Realizar audiciones |  | 2d | 2005-01-11 | 2005-01-13 | 4 | 0.8d | 0d | Peter Kelly; Scott Cooper; Jonathan Mollerup; Patti Mintz | 64h | 888.4 |
| 6 | 1.5 | ¡Preproducción completada! | milestone | 0d | 2005-01-13 | 2005-01-13 | 5 | 0.8d |  |  |  |  |
| 7 | 2 | **Producción** |  | 5.1d | 2005-01-13 | 2005-01-20 | 1 | 0d |  |  | 298.07h | 3,102.94 |
| 8 | 2.1 | Ensayos |  | 1.29d | 2005-01-13 | 2005-01-17 |  | 0d |  | 600 vatios de luz y sonido [400%]; Garrett R. Vargas [25%]; Jim Hance; Scott Cooper; Patti Mintz; Peter Kelly; John Rodman [63%]; Jon Ganio [50%]; Cámara de grabación Mini-DV; Kit reflector; Cámara Boom [200%]; Cinta de video [1 Cintas de 30-min] | 63.99h | 517.4 |
| 9 | 2.2 | Proyección del video |  | 2.5d | 2005-01-17 | 2005-01-19 | 8 | 0d |  | Garrett R. Vargas [75%]; Jim Hance [75%]; Scott Cooper [75%]; Patti Mintz [75%]; Peter Kelly [75%]; John Rodman; Jon Ganio [38%]; Electricista [150%]; Cámara de grabación Mini-DV [225%]; 600 vatios de luz y sonido [300%]; Kit reflector [75%]; Cámara Boom [150%]; Cinta de video [16 Cintas de 30-min] | 226.08h | 2,410.54 |
| 10 | 2.3 | Montaje de película |  | 1d | 2005-01-19 | 2005-01-20 | 9 | 0d |  | Jo Brown [50%]; Laboratorio Edición [50%] | 8h | 175 |

Notes:
- 4: Incluye escenarios de exteriores y escenarios de estudio interiores.
