# Comercial Juguetes Wingtip

Schedule from MS Project, 2005-01-03 to 2005-01-25, costs in €.
Southridge Video

## Calendars

- Estándar: Mon-Fri 08:00-12:00, 13:00-17:00; Sat-Sun off.

## Resources

| Resource | Unit | Rate | Notes |
| --- | --- | --- | --- |
| Garrett R. Vargas |  | 20 | Asistencia de Garret al Festival cinematográfico de la Costa Oeste los días 13 y 14 de enero; no estará disponible para trabajar en el proyecto. |
| Jim Hance |  | 18.75 |  |
| Scott Cooper |  | 19.37 |  |
| Jo Brown |  | 18.75 |  |
| Patti Mintz |  | 9.4 |  |
| Peter Kelly |  | 16.75 |  |
| John Rodman |  | 22 |  |
| Jonathan Mollerup |  | 10 |  |
| Jon Ganio |  | 15.5 |  |
| Electricista |  | 22 |  |
| Cámara de grabación Mini-DV |  | 6.25 |  |
| 600 vatios de luz y sonido |  | 2.5 |  |
| Kit reflector |  |  |  |
| Cámara Boom |  |  |  |
| Laboratorio Edición |  | 25 |  |
| Cinta de video | Cintas de 30-min | 5 |  |

## Schedule

| ID | WBS | Task | Type | Duration | Start | Finish | Predecessors | Total slack | Resources | Work | Cost |
| --- | --- | --- | --- | --- | --- | --- | --- | --- | --- | --- | --- |
| 1 | 1 | **Preproducción** |  | 8.5d | 2005-01-03 | 2005-01-13 |  | 0d |  | 168h | 2,631.7 |
| 2 | 1.1 | Revisar guión |  | 2.5d | 2005-01-03 | 2005-01-05 |  | 0d | Garrett R. Vargas; Scott Cooper | 40h | 787.5 |
| 3 | 1.2 | Reunir personal de producción |  | 3d | 2005-01-05 | 2005-01-10 | 2 | 0d | Garrett R. Vargas; Patti Mintz | 48h | 705.6 |
| 4 | 1.3 | Elegir lugares |  | 1d | 2005-01-10 | 2005-01-11 | 3 | 0d | Scott Cooper; Patti Mintz; Cinta de video [4 Cintas de 30-min] | 16h | 250.2 |
| 5 | 1.4 | Realizar audiciones |  | 2d | 2005-01-11 | 2005-01-13 | 4 | 0d | Peter Kelly; Scott Cooper; Jonathan Mollerup; Patti Mintz | 64h | 888.4 |
| 6 | 1.5 | ¡Preproducción completada! | milestone | 0d | 2005-01-13 | 2005-01-13 | 5 | 0d |  |  |  |
| 7 | 2 | **Producción** |  | 4.5d | 2005-01-13 | 2005-01-19 | 1 | 0d |  | 456h | 4,476.7 |
| 8 | 2.1 | Ensayos |  | 2.25d | 2005-01-13 | 2005-01-17 |  | 0d | Garrett R. Vargas; Jim Hance; Scott Cooper; Patti Mintz; Peter Kelly; Jon Ganio [50%]; John Rodman; 600 vatios de luz y sonido [400%]; Cámara Boom [200%]; Cámara de grabación Mini-DV; Kit reflector; Cinta de video [1 Cintas de 30-min] | 214h | 1,717.4 |
| 9 | 2.2 | Proyección del video |  | 2d | 2005-01-17 | 2005-01-18 | 8 | 0d | Garrett R. Vargas; Jim Hance; Scott Cooper; Patti Mintz; Peter Kelly; Jon Ganio [50%]; John Rodman; 600 vatios de luz y sonido [400%]; Cámara Boom [200%]; Cámara de grabación Mini-DV [300%]; Kit reflector; Cinta de video [16 Cintas de 30-min]; Electricista [200%] | 226h | 2,409.3 |
| 10 | 2.3 | Montaje de película |  | 1d | 2005-01-19 | 2005-01-19 | 9 | 0d | Jo Brown; Laboratorio Edición | 16h | 350 |
| 11 | 2.4 | ¡Producción completada! | milestone | 0d | 2005-01-19 | 2005-01-19 | 10 | 0d |  |  |  |
| 12 | 3 | **Postproducción** |  | 3.5d | 2005-01-20 | 2005-01-25 | 7 | 0d |  | 76h | 1,563 |
| 13 | 3.1 | Montaje |  | 2d | 2005-01-20 | 2005-01-21 |  | 0d | Laboratorio Edición; Scott Cooper; Peter Kelly | 48h | 978 |
| 14 | 3.2 | Añadir sonido final |  | 1d | 2005-01-24 | 2005-01-24 | 13 | 0d | Laboratorio Edición; Jo Brown; Scott Cooper | 24h | 505 |
| 15 | 3.3 | Copia final para el cliente |  | 4h | 2005-01-25 | 2005-01-25 | 14 | 0d | Garrett R. Vargas | 4h | 80 |

Notes:
- 4: Incluye escenarios de exteriores y escenarios de estudio interiores.
