# Proyecto de las oficinas centrales

Schedule from MS Project, 1998-08-10 to 1998-12-04, costs in $.
Reubicación

## Calendars

- Estándar: Mon-Fri 08:00-12:00, 13:00-17:00; Sat-Sun off. Exceptions (off unless hours are given): 1998-09-04 08:00-12:00, 1998-09-07.

## Resources

| Resource | Group | Rate |
| --- | --- | --- |
| auxiliar administrativo | personal oficina | 20 |
| arquitecto | contratado | 65 |
| ayudante del jefe de operaciones | personal oficina | 25 |
| carpintero | mantenimiento | 35 |
| responsable de finanzas | directiva | 38.46 |
| técnico informático 1 | técnicos | 30 |
| técnico informático 2 | técnicos | 26 |
| sala de conferencias | espacios |  |
| empresa de demolición | contratado |  |
| electricista | mantenimiento | 50 |
| empresa revestimiento suelo | contratado |  |
| empresa constructora | contratado | 50 |
| portero | mantenimiento | 16 |
| ordenanza | mantenimiento | 18 |
| jefe de oficina | directiva | 21.63 |
| jefe de operaciones | directiva | 25 |
| pintor | mantenimiento | 40 |
| presidente | directiva | 43.27 |
| agente inmobiliario | contratado | 50 |
| camión | contratado | 30 |
| vicepresidente | directiva | 36.06 |
| servidor |  |  |

## Schedule

| ID | WBS | Task | Type | Duration | Start | Finish | Predecessors | Total slack | Free slack | Resources | Work | Cost |
| --- | --- | --- | --- | --- | --- | --- | --- | --- | --- | --- | --- | --- |
| 1 | 1 | **Reubicación oficinas centrales** |  | 82.88d | 1998-08-10 | 1998-12-04 |  | 0d |  |  | 1241h | 52,403.61 |
| 2 | 1.1 | **Planificación** |  | 34d | 1998-08-10 | 1998-09-28 |  | 0.5d | 0d |  | 690h | 29,799.61 |
| 3 | 1.1.1 | Escribir propuesta |  | 3d | 1998-08-10 | 1998-08-12 |  | 0.5d | 0d | jefe de operaciones; jefe de oficina | 36h | 819.23 |
| 4 | 1.1.2 | Contratar arquitecto |  | 2d | 1998-08-13 | 1998-08-14 | 3 | 0.75d | 0d | jefe de oficina; vicepresidente | 32h | 923.07 |
| 5 | 1.1.3 | Localizar nueva ubicación |  | 1w | 1998-08-17 | 1998-08-21 | 4 | 0.75d | 0d | arquitecto; jefe de oficina; agente inmobiliario | 120h | 5,465.38 |
| 6 | 1.1.4 | Presentar propuesta |  | 2d | 1998-08-24 | 1998-08-25 | 5 | 0.75d | 0d | jefe de operaciones; sala de conferencias; arquitecto; presidente; vicepresidente | 80h | 2,709.23 |
| 7 | 1.1.5 | Aprobación de la directiva | milestone | 0d | 1998-08-25 | 1998-08-25 | 6 | 0.75d | 0d |  |  |  |
| 8 | 1.1.6 | Negociar nuevo alquiler |  | 4d | 1998-08-26 | 1998-08-31 | 7 | 0.75d | 0d | vicepresidente; responsable de finanzas; agente inmobiliario | 96h | 3,984.62 |
| 9 | 1.1.7 | Terminar dibujos |  | 1w | 1998-08-28 | 1998-09-03 | 8FS-2d | 0.75d | 0d | arquitecto [200%] | 80h | 5,200 |
| 10 | 1.1.8 | Seleccionar subcontratados |  | 1.5w | 1998-09-04 | 1998-09-16 | 9 | 0.75d | 0d | arquitecto; jefe de operaciones; jefe de oficina | 160h | 6,198.08 |
| 11 | 1.1.9 | Contratar empresa de mudanzas |  | 4d | 1998-09-11 | 1998-09-16 | 10FF | 0.75d | 0d | jefe de operaciones [75%] | 16h | 400 |
| 12 | 1.1.10 | Enviar dibujos |  | 1.5w | 1998-09-17 | 1998-09-28 | 11 | 0.75d | 0d | arquitecto; auxiliar administrativo [50%] | 70h | 4,100 |
| 13 | 1.1.11 | Permisos recibidos | milestone | 0d | 1998-09-28 | 1998-09-28 | 12 | 0.75d |  |  |  |  |
| 14 | 1.2 | **Remodelación** |  | 39.5d | 1998-09-28 | 1998-11-20 | 2 | 0d |  |  | 408h | 19,116 |
| 15 | 1.2.1 | Demolición del espacio existente |  | 3d | 1998-09-28 | 1998-10-01 |  | 0.75d | 0d | empresa de demolición | 24h | 4,000 |
| 16 | 1.2.2 | Levantar tabiques |  | 3.5d | 1998-10-01 | 1998-10-06 | 15 | 0.75d | 0d | empresa constructora [150%] | 32h | 1,600 |
| 17 | 1.2.3 | Instalación eléctrica |  | 6d | 1998-10-07 | 1998-10-14 | 16 | 0.75d | 0d | electricista | 48h | 2,400 |
| 18 | 1.2.4 | Instalación de líneas de voz y datos |  | 3d | 1998-10-16 | 1998-10-20 | 17FS+1d | 0.75d | 0d | electricista | 24h | 1,200 |
| 19 | 1.2.5 | Terminar paredes |  | 1w | 1998-10-21 | 1998-10-27 | 18 | 0.75d | 0d | pintor; empresa constructora | 80h | 4,200 |
| 20 | 1.2.6 | Instalar puertas y ventanas |  | 3d | 1998-10-26 | 1998-10-28 | 19FS-2d | 0.75d | 0d | carpintero | 24h | 840 |
| 21 | 1.2.7 | Pintar |  | 4d | 1998-10-29 | 1998-11-03 | 20 | 0.75d | 0d | pintor | 32h | 1,280 |
| 22 | 1.2.8 | Colocar moqueta: oficinas |  | 3d | 1998-11-04 | 1998-11-06 | 21 | 0.75d | 0d | empresa revestimiento suelo | 24h |  |
| 23 | 1.2.9 | Colocar linóleo: sala del servidor |  | 3d | 1998-11-04 | 1998-11-06 | 22SS | 0.75d | 0d | empresa revestimiento suelo | 24h |  |
| 24 | 1.2.10 | Ultimas reparaciones |  | 1w | 1998-11-09 | 1998-11-13 | 22, 23 | 0.75d | 0d | carpintero [50%]; electricista [50%] | 40h | 1,700 |
| 25 | 1.2.11 | Probar sistemas |  | 2d | 1998-11-16 | 1998-11-17 | 24 | 1.75d | 1d | electricista | 16h | 800 |
| 26 | 1.2.12 | Revisión de acabado |  | 3d | 1998-11-16 | 1998-11-18 | 24, 25FF | 0.75d | 0d | carpintero | 24h | 840 |
| 27 | 1.2.13 | Limpieza final |  | 2d | 1998-11-18 | 1998-11-20 | 26 | 0d |  | portero | 16h | 256 |
| 28 | 1.2.14 | Remodelación terminada | milestone | 0d | 1998-11-20 | 1998-11-20 | 27 | 0d |  |  |  |  |

| ID | WBS | Task | Type | Duration | Start | Finish | Predecessors | Total slack | Free slack | Resources | Work | Cost |
| --- | --- | --- | --- | --- | --- | --- | --- | --- | --- | --- | --- | --- |
| 29 | 1.3 | **Traslado** |  | 9.38d | 1998-11-23 | 1998-12-04 | 14 | 0d |  |  | 143h | 3,488 |
| 30 | 1.3.1 | **Oficinas** |  | 6d | 1998-11-23 | 1998-11-30 |  | 0d |  |  | 72h | 1,712 |
| 31 | 1.3.1.1 | Desconectar computadoras/equipos |  | 2d | 1998-11-23 | 1998-11-24 |  | 0d |  | técnico informático 1 | 16h | 528 |
| 32 | 1.3.1.2 | Desmontar mobiliario |  | 2d | 1998-11-24 | 1998-11-25 | 31FS-1d | 3.25d | 0d | ordenanza | 16h | 288 |
| 33 | 1.3.1.3 | Trasladar mobiliario/equipo/cajas |  | 4h | 1998-11-26 | 1998-11-26 | 32 | 3.25d | 0d | ordenanza; camión | 8h | 192 |
| 34 | 1.3.1.4 | Montar mobiliario |  | 2d | 1998-11-26 | 1998-11-30 | 33 | 3.25d | 0d | ordenanza | 16h | 288 |
| 35 | 1.3.1.5 | Conectar computadoras/equipos |  | 2d | 1998-11-27 | 1998-11-30 | 34FS-1d | 3d | 0d | técnico informático 2 | 16h | 416 |
| 36 | 1.3.1.6 | Oficinas terminadas | milestone | 0d | 1998-11-30 | 1998-11-30 | 35 | 3.38d |  |  |  |  |
| 37 | 1.3.2 | **Sala del servidor** |  | 7.38d | 1998-11-25 | 1998-12-04 | 31 | 0d |  |  | 71h | 1,776 |
| 38 | 1.3.2.1 | Hacer copia de seguridad del servidor |  | 15h | 1998-11-25 | 1998-11-26 |  | 0d |  | servidor | 15h |  |
| 39 | 1.3.2.2 | Desconectar servidor |  | 2d | 1998-11-26 | 1998-11-30 | 38 | 0d |  | técnico informático 1 | 16h | 528 |
| 40 | 1.3.2.3 | Trasladar servidor |  | 4h | 1998-11-30 | 1998-12-01 | 39 | 0d |  | ordenanza; camión | 8h | 192 |
| 41 | 1.3.2.4 | Conectar servidor |  | 2d | 1998-12-01 | 1998-12-03 | 40 | 0d |  | técnico informático 1 | 16h | 528 |
| 42 | 1.3.2.5 | Probar servidor |  | 1d | 1998-12-03 | 1998-12-04 | 41 | 0d |  | técnico informático 1 [200%] | 16h | 528 |
| 43 | 1.3.2.6 | Sala del servidor terminada | milestone | 0d | 1998-12-04 | 1998-12-04 | 42 | 0d |  |  |  |  |
| 44 | 1.4 | Traslado terminado | milestone | 0d | 1998-12-04 | 1998-12-04 | 29, 36 | 0d |  |  |  |  |
