Schedule from MS Project, 2009-06-02 to 2009-08-15, costs in €.

## Calendars

- Estándar: Mon-Fri 09:00-13:00, 15:00-19:00; Sat-Sun off. Exceptions (off unless hours are given): 2009-07-25 09:00-13:00, 15:00-19:00.

## Resources

| Resource | Rate |
| --- | --- |
| Novio |  |
| Novia |  |
| Organizador | 35 |
| Traje novio | 700 |
| Traje novia | 1000 |
| Alianzas | 300 |
| Peluquería/Maquillaje | 180 |
| Reportaje fotográfico | 25 |
| Album fotográfico | 1200 |
| Música ceremonia | 180 |
| Música banquete | 50 |
| Alquiler vehículo novios | 300 |
| Alquiler vehículo invitados | 50 |
| Ceremonia | 30 |
| Licencia ayuntamiento | 30 |
| Flores elegidas | 200 |
| Ramo novia | 50 |
| Instalación decoración floral | 30 |
| Servicio limpieza | 20 |
| Alquiler recinto | 200 |
| Alquiler carpa | 1000 |
| Montaje carpa | 60 |
| Menu elegido | 90 |
| Servicio Catering | 30 |
| Reserva hotel | 400 |
| Invitaciones boda | 120 |
| Envio Invitaciones | 50 |
| Regalos madrina | 150 |
| Regalos padrino | 150 |

## Schedule

| ID | WBS | Task | Type | Duration | Start | Finish | Predecessors | Baseline start | Baseline finish | Baseline duration | Total slack | Free slack | Constraint | Deadline | Resources | Work | Cost | Baseline cost |
| --- | --- | --- | --- | --- | --- | --- | --- | --- | --- | --- | --- | --- | --- | --- | --- | --- | --- | --- |
| 1 | 1 | **Vestuario** |  | 33.88d | 2009-06-02 10:00 | 2009-07-17 19:00 |  | 2009-06-02 10:00 | 2009-07-17 19:00 | 33.88d | 15.75d |  |  |  |  | 21h | 1,770 | 1,770 |
| 2 | 1.1 | **Vestuario del novio** |  | 13.38d | 2009-06-02 16:00 | 2009-06-20 10:00 |  | 2009-06-02 16:00 | 2009-06-20 10:00 | 13.38d | 18.25d |  |  |  |  | 10h | 35 | 35 |
| 3 | 1.1.1 | Concertar cita previa |  | 1h | 2009-06-02 16:00 | 2009-06-02 17:00 |  | 2009-06-02 16:00 | 2009-06-02 17:00 | 1h | 18.25d | 0.12d |  |  | Organizador | 1h | 35 | 35 |
| 4 | 1.1.2 | Selección de posibilidades |  | 3h | 2009-06-08 19:00 | 2009-06-09 19:00 | 3 | 2009-06-08 19:00 | 2009-06-09 19:00 | 3h | 19d | 0d |  |  | Novio | 3h |  |  |
| 5 | 1.1.3 | Elección traje definitivo |  | 3h | 2009-06-09 19:00 | 2009-06-10 19:00 | 4 | 2009-06-09 19:00 | 2009-06-10 19:00 | 3h | 19d | 0d |  |  | Novio | 3h |  |  |
| 6 | 1.1.4 | Selección de complementos |  | 1h | 2009-06-10 19:00 | 2009-06-10 20:00 | 5 | 2009-06-10 19:00 | 2009-06-10 20:00 | 1h | 19d | 0d |  |  | Novio | 1h |  |  |
| 7 | 1.1.5 | Elección definitiva de complementos |  | 1h | 2009-06-10 20:00 | 2009-06-10 21:00 | 6 | 2009-06-10 20:00 | 2009-06-10 21:00 | 1h | 19d | 0d |  |  | Novio | 1h |  |  |
| 8 | 1.1.6 | Firma de contrato modista | milestone | 0d | 2009-06-10 21:00 | 2009-06-10 21:00 | 7 | 2009-06-10 21:00 | 2009-06-10 21:00 | 0d | 19d | 0d |  |  | Organizador |  |  |  |
| 9 | 1.1.7 | Realización de arreglos |  | 7d | 2009-06-11 09:00 | 2009-06-19 19:00 | 8 | 2009-06-11 09:00 | 2009-06-19 19:00 | 7d | 19d | 0d |  |  |  |  |  |  |
| 10 | 1.1.8 | Prueba de arreglos |  | 1h | 2009-06-20 09:00 | 2009-06-20 10:00 | 9 | 2009-06-20 09:00 | 2009-06-20 10:00 | 1h | 19.88d | 0d |  |  | Novio | 1h |  |  |
| 11 | 1.1.9 | Entrega del traje | milestone | 0d | 2009-06-20 10:00 | 2009-06-20 10:00 | 10 | 2009-06-20 10:00 | 2009-06-20 10:00 | 0d | 20d | 19d |  | 2009-07-17 19:00 | Novio; Organizador; Traje novio |  |  |  |
| 12 | 1.2 | **Vestuario de la novia** |  | 17.88d | 2009-06-02 10:00 | 2009-06-25 20:00 |  | 2009-06-02 10:00 | 2009-06-25 20:00 | 17.88d | 15.75d |  |  |  |  | 11h | 35 | 35 |
| 13 | 1.2.1 | Concertar cita previa |  | 1h | 2009-06-02 10:00 | 2009-06-02 11:00 |  | 2009-06-02 10:00 | 2009-06-02 11:00 | 1h | 15.75d | 0.62d |  |  | Organizador | 1h | 35 | 35 |
| 14 | 1.2.2 | Selección de posibilidades |  | 4h | 2009-06-08 19:00 | 2009-06-09 20:00 | 13 | 2009-06-08 19:00 | 2009-06-09 20:00 | 4h | 15d | 0d |  |  | Novia | 4h |  |  |
| 15 | 1.2.3 | Elección traje definitivo |  | 3h | 2009-06-09 20:00 | 2009-06-10 20:00 | 14 | 2009-06-09 20:00 | 2009-06-10 20:00 | 3h | 15d | 0d |  |  | Novia | 3h |  |  |
| 16 | 1.2.4 | Selección de complementos |  | 1h | 2009-06-10 20:00 | 2009-06-10 21:00 | 15 | 2009-06-10 20:00 | 2009-06-10 21:00 | 1h | 15.88d | 0.88d |  |  | Novia | 1h |  |  |
| 17 | 1.2.5 | Elección definitiva de complementos |  | 1h | 2009-06-11 19:00 | 2009-06-11 20:00 | 16 | 2009-06-11 19:00 | 2009-06-11 20:00 | 1h | 15d | 0d |  |  | Novia | 1h |  |  |
| 18 | 1.2.6 | Firma de contrato modista | milestone | 0d | 2009-06-11 20:00 | 2009-06-11 20:00 | 17 | 2009-06-11 20:00 | 2009-06-11 20:00 | 0d | 15.88d | 0d |  |  | Organizador |  |  |  |
| 19 | 1.2.7 | Realización de arreglos |  | 10d | 2009-06-12 09:00 | 2009-06-25 19:00 | 18 | 2009-06-12 09:00 | 2009-06-25 19:00 | 10d | 15.88d | 0d |  |  |  |  |  |  |
| 20 | 1.2.8 | Prueba de arregos |  | 1h | 2009-06-25 19:00 | 2009-06-25 20:00 | 19 | 2009-06-25 19:00 | 2009-06-25 20:00 | 1h | 15.88d | 0d |  |  | Novia | 1h |  |  |
| 21 | 1.2.9 | Entrega del traje | milestone | 0d | 2009-06-25 20:00 | 2009-06-25 20:00 | 20 | 2009-06-25 20:00 | 2009-06-25 20:00 | 0d | 16d | 15d |  | 2009-07-17 19:00 | Novia; Organizador; Traje novia |  |  |  |
| 22 | 1.3 | Pago y cierre de vestuario | milestone | 0d | 2009-07-17 09:00 | 2009-07-17 19:00 | 11, 21 | 2009-07-17 09:00 | 2009-07-17 19:00 | 0d | 21d |  | start no earlier than 2009-07-17 09:00 |  | Organizador; Traje novia; Traje novio |  | 1,700 | 1,700 |
| 23 | 2 | **Anillos** |  | 33.25d | 2009-06-02 17:00 | 2009-07-17 19:00 |  | 2009-06-02 17:00 | 2009-07-17 19:00 | 33.25d | 4.12d |  |  |  |  | 9h | 335 | 335 |
| 24 | 2.1 | Concertar cita previa |  | 1h | 2009-06-02 17:00 | 2009-06-02 18:00 |  | 2009-06-02 17:00 | 2009-06-02 18:00 | 1h | 4.12d | 0d |  |  | Organizador | 1h | 35 | 35 |
| 25 | 2.2 | Selección de posiblidades |  | 3h | 2009-06-11 19:00 | 2009-06-12 19:00 | 24 | 2009-06-11 19:00 | 2009-06-12 19:00 | 3h | 4d | 0d |  |  | Novia; Novio | 4h |  |  |
| 26 | 2.3 | Elección modelo definitivo |  | 2h | 2009-06-12 19:00 | 2009-06-18 20:00 | 25 | 2009-06-12 19:00 | 2009-06-18 20:00 | 2h | 4d | 0d |  |  | Novio; Novia | 2h |  |  |
| 27 | 2.4 | Firma de contrato joyería | milestone | 0d | 2009-06-18 20:00 | 2009-06-18 20:00 | 26 | 2009-06-18 20:00 | 2009-06-18 20:00 | 0d | 4d | 0d |  |  | Organizador |  |  |  |
| 28 | 2.5 | Arreglos y grabados |  | 7d | 2009-06-19 09:00 | 2009-06-29 19:00 | 27 | 2009-06-19 09:00 | 2009-06-29 19:00 | 7d | 4d | 0d |  |  |  |  |  |  |
| 29 | 2.6 | Prueba de arregos |  | 2h | 2009-06-29 19:00 | 2009-07-10 21:00 | 28 | 2009-06-29 19:00 | 2009-07-10 21:00 | 2h | 4d | 0d |  |  | Novio; Novia; Alianzas | 2h |  |  |
| 30 | 2.7 | Entrega de alianzas | milestone | 0d | 2009-07-10 21:00 | 2009-07-10 21:00 | 29 | 2009-07-10 21:00 | 2009-07-10 21:00 | 0d | 5d | 4d |  | 2009-07-17 19:00 | Novia; Novio; Alianzas |  |  |  |
| 31 | 2.8 | Pago y Cierre contrato alianzas | milestone | 0d | 2009-07-17 09:00 | 2009-07-17 19:00 | 30 | 2009-07-17 09:00 | 2009-07-17 19:00 | 0d | 21d |  | start no earlier than 2009-07-17 09:00 |  | Organizador; Alianzas |  | 300 | 300 |

| ID | WBS | Task | Type | Duration | Start | Finish | Predecessors | Baseline start | Baseline finish | Baseline duration | Total slack | Free slack | Constraint | Resources | Work | Cost | Baseline cost |
| --- | --- | --- | --- | --- | --- | --- | --- | --- | --- | --- | --- | --- | --- | --- | --- | --- | --- |
| 32 | 3 | **Peinado y maquillaje** |  | 14.12d | 2009-07-10 18:00 | 2009-07-29 19:20 |  | 2009-07-10 18:00 | 2009-07-29 19:20 | 14.12d | 10d |  |  |  | 11h | 395 | 395 |
| 33 | 3.1 | Concertar cita previa |  | 1h | 2009-07-10 18:00 | 2009-07-10 19:00 |  | 2009-07-10 18:00 | 2009-07-10 19:00 | 1h | 10d | 0d |  | Organizador | 1h | 35 | 35 |
| 34 | 3.2 | Selección de posiblidades |  | 1h | 2009-07-11 09:00 | 2009-07-11 10:00 | 33 | 2009-07-11 09:00 | 2009-07-11 10:00 | 1h | 10.38d | 0d |  | Novia | 1h |  |  |
| 35 | 3.3 | Prueba de posiblidades |  | 4h | 2009-07-22 20:00 | 2009-07-23 21:00 | 34 | 2009-07-22 20:00 | 2009-07-23 21:00 | 4h | 12d | 0.88d |  | Novia | 4h |  |  |
| 36 | 3.4 | Selección de peinado definitivo |  | 1h | 2009-07-24 19:00 | 2009-07-24 20:00 | 35 | 2009-07-24 19:00 | 2009-07-24 20:00 | 1h | 11d | 0d |  | Novia | 1h |  |  |
| 37 | 3.5 | Firma de contrato peinado | milestone | 0d | 2009-07-24 20:00 | 2009-07-24 20:00 | 36 | 2009-07-24 20:00 | 2009-07-24 20:00 | 0d | 11d | 0d |  | Organizador |  |  |  |
| 38 | 3.6 | Servicio pel/maq fotos estudio |  | 2h | 2009-07-25 09:00 | 2009-07-25 11:00 | 37 | 2009-07-25 09:00 | 2009-07-25 11:00 | 2h | 11.75d | 0d |  | Peluquería/Maquillaje; Novia | 2h | 180 | 180 |
| 39 | 3.7 | Servicio de peluquería/maquillaje |  | 2h | 2009-07-28 20:20 | 2009-07-29 19:20 | 38 | 2009-07-28 20:20 | 2009-07-29 19:20 | 2h | 12d | 0d | start no earlier than 2009-07-25 09:00 | Peluquería/Maquillaje; Novia | 2h | 180 | 180 |
| 40 | 3.8 | Pago y Cierre contrato peluquería/maq | milestone | 0d | 2009-07-29 19:20 | 2009-07-29 19:20 | 39 | 2009-07-29 19:20 | 2009-07-29 19:20 | 0d | 12d |  |  | Organizador; Peluquería/Maquillaje |  |  |  |
| 41 | 4 | **Fotografía** |  | 25.88d | 2009-07-13 10:00 | 2009-08-15 10:00 |  | 2009-07-13 10:00 | 2009-08-15 10:00 | 25.88d | 0d |  |  |  | 25h | 1,368.33 | 1,368.33 |
| 42 | 4.1 | Concertar cita previa |  | 1h | 2009-07-13 10:00 | 2009-07-13 11:00 |  | 2009-07-13 10:00 | 2009-07-13 11:00 | 1h | 16.75d | 0.62d |  | Organizador | 1h | 35 | 35 |
| 43 | 4.2 | Selección de album |  | 2h | 2009-07-21 19:00 | 2009-07-21 21:00 | 42 | 2009-07-21 19:00 | 2009-07-21 21:00 | 2h | 16d | 0d |  | Novio; Novia | 2h |  |  |
| 44 | 4.3 | Firma contrato fotógrafo | milestone | 0d | 2009-07-21 21:00 | 2009-07-21 21:00 | 43 | 2009-07-21 21:00 | 2009-07-21 21:00 | 0d | 17d | 3d |  | Organizador |  |  |  |
| 45 | 4.4 | Realización fotos estudio |  | 4h | 2009-07-25 11:00 | 2009-07-28 20:20 | 44, 21, 11, 38 | 2009-07-25 11:00 | 2009-07-28 20:20 | 4h | 13d |  |  | Novio; Novia | 4h |  |  |
| 46 | 4.5 | Realización reportaje fotográfico |  | 8.67h | 2009-07-25 09:00 | 2009-07-28 18:20 | 44 | 2009-07-25 09:00 | 2009-07-28 18:20 | 8.67h | 13.08d |  | start no earlier than 2009-07-25 09:00 | Novio; Novia; Reportaje fotográfico | 16h | 133.33 | 133.33 |
| 47 | 4.6 | Entrega reportaje completo |  | 1h | 2009-08-15 09:00 | 2009-08-15 10:00 | 46, 45 | 2009-08-15 09:00 | 2009-08-15 10:00 | 1h | 0d |  | start no earlier than 2009-08-15 09:00 | Novio; Novia; Album fotográfico | 2h | 1,200 | 1,200 |
| 48 | 4.7 | Pago y Cierre contrato fotógrafo | milestone | 0d | 2009-08-15 10:00 | 2009-08-15 10:00 | 47 | 2009-08-15 10:00 | 2009-08-15 10:00 | 0d | 0d |  |  | Organizador; Album fotográfico; Reportaje fotográfico |  |  |  |
| 49 | 5 | **Flores y decoración** |  | 11.75d | 2009-07-13 11:00 | 2009-07-28 09:00 |  | 2009-07-13 11:00 | 2009-07-28 09:00 | 11.75d | 14d |  |  |  | 9.08h | 37.4 | 37.4 |
| 50 | 5.1 | Concertar cita previa |  | 1h | 2009-07-13 11:00 | 2009-07-13 12:00 |  | 2009-07-13 11:00 | 2009-07-13 12:00 | 1h | 15.62d | 0.5d |  | Organizador | 1h | 35 | 35 |
| 51 | 5.2 | Selección del tipo de decoración |  | 3h | 2009-07-21 20:00 | 2009-07-22 20:00 | 50 | 2009-07-21 20:00 | 2009-07-22 20:00 | 3h | 15d | 0d |  | Novio; Novia | 4h |  |  |
| 52 | 5.3 | Selección tipo plantas |  | 2h | 2009-07-22 20:00 | 2009-07-24 19:00 | 51 | 2009-07-22 20:00 | 2009-07-24 19:00 | 2h | 15d | 0d |  | Novio; Novia | 2h |  |  |
| 53 | 5.4 | Selección ramo novia |  | 2h | 2009-07-24 19:00 | 2009-07-24 21:00 | 52 | 2009-07-24 19:00 | 2009-07-24 21:00 | 2h | 15d | 0d |  | Novio; Novia | 2h |  |  |
| 54 | 5.5 | Firma contrato floristería | milestone | 0d | 2009-07-24 21:00 | 2009-07-24 21:00 | 53 | 2009-07-24 21:00 | 2009-07-24 21:00 | 0d | 15d | 0d |  | Novio; Novia |  |  |  |
| 55 | 5.6 | Instalación decoración iglesia |  | 8h | 2009-07-25 09:00 | 2009-07-25 19:00 | 54, 116 | 2009-07-25 09:00 | 2009-07-25 19:00 | 8h | 15d | 1d | start no earlier than 2009-07-25 09:00 | Instalación decoración floral [1%] | 0.08h | 2.4 | 2.4 |
| 56 | 5.7 | Entrega ramo novia | milestone | 0d | 2009-07-25 09:00 | 2009-07-25 09:00 | 54 | 2009-07-25 09:00 | 2009-07-25 09:00 | 0d | 16d | 2d | start no earlier than 2009-07-25 09:00 | Ramo novia; Novia |  |  |  |
| 57 | 5.8 | Pago y Cierre contrato floristería | milestone | 0d | 2009-07-28 09:00 | 2009-07-28 09:00 | 56, 55 | 2009-07-28 09:00 | 2009-07-28 09:00 | 0d | 14d |  | start no earlier than 2009-07-28 09:00 | Organizador; Flores elegidas |  |  |  |

| ID | WBS | Task | Type | Duration | Start | Finish | Predecessors | Baseline start | Baseline finish | Baseline duration | Total slack | Free slack | Constraint | Deadline | Resources | Work | Cost | Baseline cost |
| --- | --- | --- | --- | --- | --- | --- | --- | --- | --- | --- | --- | --- | --- | --- | --- | --- | --- | --- |
| 58 | 6 | **Papelería y regalos** |  | 40d | 2009-06-02 19:00 | 2009-07-28 09:00 |  | 2009-06-02 19:00 | 2009-07-28 09:00 | 40d | 1.88d |  |  |  |  | 153h | 4,495 | 4,495 |
| 59 | 6.1 | **Invitaciones** |  | 12d | 2009-06-02 19:00 | 2009-06-18 19:00 |  | 2009-06-02 19:00 | 2009-06-18 19:00 | 12d | 1d |  |  |  |  | 35h | 205 | 205 |
| 60 | 6.1.1 | Elaboración lista invitados |  | 2d | 2009-06-02 19:00 | 2009-06-08 19:00 |  | 2009-06-02 19:00 | 2009-06-08 19:00 | 2d | 1d | 0d |  |  | Novio; Novia | 32h |  |  |
| 61 | 6.1.2 | Elaboración lista bodas |  | 2d | 2009-06-09 09:00 | 2009-06-10 19:00 | 60 | 2009-06-09 09:00 | 2009-06-10 19:00 | 2d | 1.62d | 0d |  |  |  |  |  |  |
| 62 | 6.1.3 | Concertar cita previa |  | 1h | 2009-06-11 09:00 | 2009-06-11 10:00 | 61 | 2009-06-11 09:00 | 2009-06-11 10:00 | 1h | 1.62d | 0d |  |  | Organizador | 1h | 35 | 35 |
| 63 | 6.1.4 | Selección tipo invitación |  | 2h | 2009-06-11 10:00 | 2009-06-11 12:00 | 62 | 2009-06-11 10:00 | 2009-06-11 12:00 | 2h | 1.62d | 0.5d |  |  |  |  |  |  |
| 64 | 6.1.5 | Selección texto invitación |  | 1h | 2009-06-11 18:00 | 2009-06-11 19:00 | 63 | 2009-06-11 18:00 | 2009-06-11 19:00 | 1h | 1d | 0d |  |  | Novio; Novia | 2h |  |  |
| 65 | 6.1.6 | Firma contrato papelería | milestone | 0d | 2009-06-11 19:00 | 2009-06-11 19:00 | 64 | 2009-06-11 19:00 | 2009-06-11 19:00 | 0d | 1d | 0d |  |  | Organizador |  |  |  |
| 66 | 6.1.7 | Envío invitaciones |  | 5d | 2009-06-12 09:00 | 2009-06-18 19:00 | 65 | 2009-06-12 09:00 | 2009-06-18 19:00 | 5d | 1d | 28d |  | 2009-06-19 19:00 | Invitaciones boda; Envio Invitaciones |  | 170 | 170 |
| 67 | 6.2 | **Regalo madrina** |  | 20.62d | 2009-06-03 09:00 | 2009-07-01 16:00 |  | 2009-06-03 09:00 | 2009-07-01 16:00 | 20.62d | 17.38d |  |  |  |  | 59h | 2,145 | 2,145 |
| 68 | 6.2.1 | Concertar cita previa |  | 1h | 2009-06-03 09:00 | 2009-06-03 10:00 |  | 2009-06-03 09:00 | 2009-06-03 10:00 | 1h | 17.88d | 0.75d |  |  | Organizador | 1h | 35 | 35 |
| 69 | 6.2.2 | Selección regalo |  | 2h | 2009-06-19 19:00 | 2009-06-19 21:00 | 68 | 2009-06-19 19:00 | 2009-06-19 21:00 | 2h | 17d | 0d |  |  | Novio; Novia | 2h |  |  |
| 70 | 6.2.3 | Firma contrato regalos madrina | milestone | 0d | 2009-06-19 21:00 | 2009-06-19 21:00 | 69 | 2009-06-19 21:00 | 2009-06-19 21:00 | 0d | 17.5d | 0d |  |  | Organizador |  |  |  |
| 71 | 6.2.4 | Entrega regalos madrina |  | 7d | 2009-06-22 12:00 | 2009-07-01 16:00 | 70 | 2009-06-22 12:00 | 2009-07-01 16:00 | 7d | 17.38d | 19.38d |  | 2009-07-24 19:00 | Organizador; Regalos madrina | 56h | 2,110 | 2,110 |
| 72 | 6.3 | **Regalo padrino** |  | 27.62d | 2009-06-03 10:00 | 2009-07-10 17:00 |  | 2009-06-03 10:00 | 2009-07-10 17:00 | 27.62d | 10.25d |  |  |  |  | 59h | 2,145 | 2,145 |
| 73 | 6.3.1 | Concertar cita previa |  | 1h | 2009-06-03 10:00 | 2009-06-03 11:00 |  | 2009-06-03 10:00 | 2009-06-03 11:00 | 1h | 10.75d | 0.62d |  |  | Organizador | 1h | 35 | 35 |
| 74 | 6.3.2 | Selección regalo |  | 2h | 2009-06-19 20:00 | 2009-06-20 10:00 | 73 | 2009-06-19 20:00 | 2009-06-20 10:00 | 2h | 10d | 0d |  |  | Novio; Novia | 2h |  |  |
| 75 | 6.3.3 | Firma contrato regalo padrino | milestone | 0d | 2009-06-20 10:00 | 2009-06-20 10:00 | 74 | 2009-06-20 10:00 | 2009-06-20 10:00 | 0d | 10.25d | 0d |  |  | Organizador |  |  |  |
| 76 | 6.3.4 | Entrega regalos padrino |  | 7d | 2009-07-01 16:00 | 2009-07-10 17:00 | 75 | 2009-07-01 16:00 | 2009-07-10 17:00 | 7d | 10.25d | 12.25d |  | 2009-07-24 19:00 | Organizador; Regalos padrino | 56h | 2,110 | 2,110 |
| 77 | 6.4 | Pago y Cierre contrato papelería y regalos | milestone | 0d | 2009-07-28 09:00 | 2009-07-28 09:00 | 66, 71, 76 | 2009-07-28 09:00 | 2009-07-28 09:00 | 0d | 14d |  | start no earlier than 2009-07-28 09:00 |  | Organizador |  |  |  |
| 78 | 7 | **Orquesta y música** |  | 15.25d | 2009-07-10 17:00 | 2009-07-31 09:00 |  | 2009-07-10 17:00 | 2009-07-31 09:00 | 15.25d | 11d |  |  |  |  | 56h | 550 | 550 |
| 79 | 7.1 | **Música ceremonia** |  | 12d | 2009-07-13 09:00 | 2009-07-28 09:00 |  | 2009-07-13 09:00 | 2009-07-28 09:00 | 12d | 14d |  |  |  |  | 17h | 215 | 215 |
| 80 | 7.1.1 | Concertar cita previa |  | 1h | 2009-07-13 09:00 | 2009-07-13 10:00 |  | 2009-07-13 09:00 | 2009-07-13 10:00 | 1h | 20.62d | 0.75d |  |  | Organizador | 1h | 35 | 35 |
| 81 | 7.1.2 | Selección repertorio |  | 1.12d | 2009-07-17 19:00 | 2009-07-20 21:00 | 80 | 2009-07-17 19:00 | 2009-07-20 21:00 | 1.12d | 17.88d | 0d |  |  | Novia; Novio | 16h |  |  |
| 82 | 7.1.3 | Firma contrato música ceremonia | milestone | 0d | 2009-07-20 21:00 | 2009-07-20 21:00 | 81 | 2009-07-20 21:00 | 2009-07-20 21:00 | 0d | 19d | 4d |  |  | Organizador |  |  |  |
| 83 | 7.1.4 | Actuación día boda |  | 8h | 2009-07-25 09:00 | 2009-07-25 19:00 | 82 | 2009-07-25 09:00 | 2009-07-25 19:00 | 8h | 15d | 1d | start no earlier than 2009-07-25 09:00 |  | Música ceremonia |  | 180 | 180 |
| 84 | 7.1.5 | Pago y Cierre contrato grupo | milestone | 0d | 2009-07-28 09:00 | 2009-07-28 09:00 | 83 | 2009-07-28 09:00 | 2009-07-28 09:00 | 0d | 14d |  | start no earlier than 2009-07-28 09:00 |  | Organizador |  |  |  |

| ID | WBS | Task | Type | Duration | Start | Finish | Predecessors | Baseline start | Baseline finish | Baseline duration | Total slack | Free slack | Constraint | Deadline | Resources | Work | Cost | Baseline cost |
| --- | --- | --- | --- | --- | --- | --- | --- | --- | --- | --- | --- | --- | --- | --- | --- | --- | --- | --- |
| 85 | 7.2 | **Música banquete** |  | 15.25d | 2009-07-10 17:00 | 2009-07-31 09:00 |  | 2009-07-10 17:00 | 2009-07-31 09:00 | 15.25d | 11d |  |  |  |  | 39h | 335 | 335 |
| 86 | 7.2.1 | Concertar cita previa |  | 1h | 2009-07-10 17:00 | 2009-07-10 18:00 |  | 2009-07-10 17:00 | 2009-07-10 18:00 | 1h | 20.12d | 0d |  |  | Organizador | 1h | 35 | 35 |
| 87 | 7.2.2 | Selección tipo música |  | 2.12d | 2009-07-11 09:00 | 2009-07-17 20:00 | 86 | 2009-07-11 09:00 | 2009-07-17 20:00 | 2.12d | 20d | 0d |  |  | Novio; Novia | 32h |  |  |
| 88 | 7.2.3 | Firma contrato música banquete | milestone | 0d | 2009-07-17 20:00 | 2009-07-17 20:00 | 87 | 2009-07-17 20:00 | 2009-07-17 20:00 | 0d | 20.25d | 5d |  |  | Organizador |  |  |  |
| 89 | 7.2.4 | Actuación día boda |  | 6h | 2009-07-25 09:00 | 2009-07-25 17:00 | 88 | 2009-07-25 09:00 | 2009-07-25 17:00 | 6h | 15.25d | 4.25d | start no earlier than 2009-07-25 09:00 |  | Música banquete | 6h | 300 | 300 |
| 90 | 7.2.5 | Pago y Cierre contrato música | milestone | 0d | 2009-07-31 09:00 | 2009-07-31 09:00 | 89 | 2009-07-31 09:00 | 2009-07-31 09:00 | 0d | 11d |  | start no earlier than 2009-07-31 09:00 |  | Organizador |  |  |  |
| 91 | 8 | **Transporte** |  | 14.62d | 2009-07-13 12:00 | 2009-07-31 09:00 |  | 2009-07-13 12:00 | 2009-07-31 09:00 | 14.62d | 11d |  |  |  |  | 17h | 1,090 | 1,090 |
| 92 | 8.1 | **Transporte novios** |  | 14.62d | 2009-07-13 12:00 | 2009-07-31 09:00 |  | 2009-07-13 12:00 | 2009-07-31 09:00 | 14.62d | 11d |  |  |  |  | 5h | 635 | 635 |
| 93 | 8.1.1 | Concertar cita previa |  | 1h | 2009-07-13 12:00 | 2009-07-13 13:00 |  | 2009-07-13 12:00 | 2009-07-13 13:00 | 1h | 18.12d | 0.38d |  |  | Organizador | 1h | 35 | 35 |
| 94 | 8.1.2 | Selección del tipo de transporte |  | 3h | 2009-07-20 20:00 | 2009-07-21 20:00 | 93 | 2009-07-20 20:00 | 2009-07-21 20:00 | 3h | 17d | 0d |  |  | Novio; Novia | 4h |  |  |
| 95 | 8.1.3 | Firma contrato | milestone | 0d | 2009-07-21 20:00 | 2009-07-21 20:00 | 94 | 2009-07-21 20:00 | 2009-07-21 20:00 | 0d | 17.75d | 3d |  |  | Organizador |  |  |  |
| 96 | 8.1.4 | Desplazamiento de los novios iglesia |  | 8h | 2009-07-25 09:00 | 2009-07-25 19:00 | 95 | 2009-07-25 09:00 | 2009-07-25 19:00 | 8h | 14.75d | 0d | start no earlier than 2009-07-25 09:00 |  | Alquiler vehículo novios |  | 300 | 300 |
| 97 | 8.1.5 | Desplazamiento novios hotel noche bodas |  | 2h | 2009-07-27 09:00 | 2009-07-27 11:00 | 96 | 2009-07-27 09:00 | 2009-07-27 11:00 | 2h | 14.75d | 3.75d |  |  | Alquiler vehículo novios |  | 300 | 300 |
| 98 | 8.1.6 | Pago y Cierre del contrato | milestone | 0d | 2009-07-31 09:00 | 2009-07-31 09:00 | 97 | 2009-07-31 09:00 | 2009-07-31 09:00 | 0d | 11d |  | start no earlier than 2009-07-31 09:00 |  | Organizador |  |  |  |
| 99 | 8.2 | **Transporte invitados** |  | 14.5d | 2009-07-13 15:00 | 2009-07-31 09:00 |  | 2009-07-13 15:00 | 2009-07-31 09:00 | 14.5d | 11d |  |  |  |  | 12h | 455 | 455 |
| 100 | 8.2.1 | Concertar cita previa |  | 1h | 2009-07-13 15:00 | 2009-07-13 16:00 |  | 2009-07-13 15:00 | 2009-07-13 16:00 | 1h | 24.25d | 0d |  |  | Organizador | 1h | 35 | 35 |
| 101 | 8.2.2 | Selección del tipo de vehículo |  | 2h | 2009-07-13 16:00 | 2009-07-13 19:00 | 100 | 2009-07-13 16:00 | 2009-07-13 19:00 | 2h | 24d | 0d |  |  | Novia; Novio; Organizador | 3h | 35 | 35 |
| 102 | 8.2.3 | Determinación servicios a prestar |  | 1h | 2009-07-14 10:00 | 2009-07-14 11:00 | 101 | 2009-07-14 10:00 | 2009-07-14 11:00 | 1h | 23.88d | 0d |  |  | Organizador | 1h | 35 | 35 |
| 103 | 8.2.4 | Firma del contrato | milestone | 0d | 2009-07-14 11:00 | 2009-07-14 11:00 | 102 | 2009-07-14 11:00 | 2009-07-14 11:00 | 0d | 23.88d | 8.75d |  |  | Organizador |  |  |  |
| 104 | 8.2.5 | Servicio de transporte ida |  | 1h | 2009-07-25 09:00 | 2009-07-25 10:00 | 103 | 2009-07-25 09:00 | 2009-07-25 10:00 | 1h | 15.12d | 0d | start no earlier than 2009-07-25 09:00 |  | Alquiler vehículo invitados | 1h | 50 | 50 |
| 105 | 8.2.6 | Servicio transporte vuelta 1 |  | 3h | 2009-07-25 10:00 | 2009-07-25 13:00 | 104 | 2009-07-25 10:00 | 2009-07-25 13:00 | 3h | 15.12d | 0d | start no earlier than 2009-07-25 09:00 |  | Alquiler vehículo invitados | 3h | 150 | 150 |
| 106 | 8.2.7 | Servicio transporte vuelta 2 |  | 3h | 2009-07-25 15:00 | 2009-07-25 18:00 | 105 | 2009-07-25 15:00 | 2009-07-25 18:00 | 3h | 15.12d | 4.12d | start no earlier than 2009-07-25 09:00 |  | Alquiler vehículo invitados | 3h | 150 | 150 |
| 107 | 8.2.8 | Pago y Cierre de contrato | milestone | 0d | 2009-07-31 09:00 | 2009-07-31 09:00 | 106 | 2009-07-31 09:00 | 2009-07-31 09:00 | 0d | 11d |  | start no earlier than 2009-07-31 09:00 |  | Organizador |  |  |  |
| 108 | 9 | **Trámites administrativos** |  | 40.75d | 2009-06-02 11:00 | 2009-07-27 19:00 |  | 2009-06-02 11:00 | 2009-07-27 19:00 | 40.75d | 14d |  |  |  |  | 213h | 5,730 | 5,730 |
| 109 | 9.1 | **Iglesia** |  | 40.75d | 2009-06-02 11:00 | 2009-07-27 19:00 |  | 2009-06-02 11:00 | 2009-07-27 19:00 | 40.75d | 14d |  |  |  |  | 181h | 3,255 | 3,255 |
| 110 | 9.1.1 | Concertar cita previa párroco |  | 1h | 2009-06-02 11:00 | 2009-06-02 12:00 |  | 2009-06-02 11:00 | 2009-06-02 12:00 | 1h | 21.5d | 0d |  |  | Organizador | 1h | 35 | 35 |
| 111 | 9.1.2 | Reserva fecha boda |  | 1h | 2009-06-02 12:00 | 2009-06-02 13:00 | 110 | 2009-06-02 12:00 | 2009-06-02 13:00 | 1h | 21.5d | 0d |  |  | Organizador | 1h | 35 | 35 |
| 112 | 9.1.3 | Selección fechas cursos prematrimoniales |  | 2h | 2009-06-02 15:00 | 2009-06-02 19:00 | 111 | 2009-06-02 15:00 | 2009-06-02 19:00 | 2h | 21.5d | 17.88d |  |  | Novio; Novia; Organizador | 3h | 35 | 35 |
| 113 | 9.1.4 | Obtención certificados bautismo |  | 10d | 2009-06-03 12:00 | 2009-06-17 17:00 | 110 | 2009-06-03 12:00 | 2009-06-17 17:00 | 10d | 22.12d | 17.25d |  |  | Organizador | 80h | 2,800 | 2,800 |
| 114 | 9.1.5 | Realización cursos prematrimoniales |  | 5.12d | 2009-06-26 18:00 | 2009-07-10 21:00 | 112 | 2009-06-26 18:00 | 2009-07-10 21:00 | 5.12d | 4d | 0d | start no earlier than 2009-06-26 09:00 |  | Novio; Novia | 80h |  |  |
| 115 | 9.1.6 | Entrega certificados |  | 1h | 2009-07-13 09:00 | 2009-07-13 10:00 | 114, 113 | 2009-07-13 09:00 | 2009-07-13 10:00 | 1h | 4.88d |  |  | 2009-07-17 19:00 |  |  |  |  |
| 116 | 9.1.7 | Limpieza iglesia |  | 8h | 2009-07-24 09:00 | 2009-07-24 19:00 | 111 | 2009-07-24 09:00 | 2009-07-24 19:00 | 8h | 14.75d | 0d | start no earlier than 2009-07-24 09:00 |  | Servicio limpieza | 8h | 160 | 160 |
| 117 | 9.1.8 | Celebración ceremonia |  | 2h | 2009-07-25 09:00 | 2009-07-25 11:00 | 116 | 2009-07-25 09:00 | 2009-07-25 11:00 | 2h | 14.75d | 0.75d |  |  | Ceremonia |  | 30 | 30 |
| 118 | 9.1.9 | Recogida y limpieza iglesia |  | 8h | 2009-07-27 09:00 | 2009-07-27 19:00 | 117 | 2009-07-27 09:00 | 2009-07-27 19:00 | 8h | 14d | 0d | start no earlier than 2009-07-26 09:00 |  | Servicio limpieza | 8h | 160 | 160 |
| 119 | 9.1.10 | Iglesia recogida | milestone | 0d | 2009-07-27 19:00 | 2009-07-27 19:00 | 118 | 2009-07-27 19:00 | 2009-07-27 19:00 | 0d | 14d |  |  |  |  |  |  |  |

| ID | WBS | Task | Type | Duration | Start | Finish | Predecessors | Baseline start | Baseline finish | Baseline duration | Total slack | Free slack | Constraint | Deadline | Resources | Work | Cost | Baseline cost |
| --- | --- | --- | --- | --- | --- | --- | --- | --- | --- | --- | --- | --- | --- | --- | --- | --- | --- | --- |
| 120 | 9.2 | **Recinto banquete** |  | 28.88d | 2009-06-17 17:00 | 2009-07-27 16:00 |  | 2009-06-17 17:00 | 2009-07-27 16:00 | 28.88d | 14.38d |  |  |  |  | 32h | 2,475 | 2,475 |
| 121 | 9.2.1 | Cita previa ayuntamiento |  | 1h | 2009-06-17 17:00 | 2009-06-17 18:00 |  | 2009-06-17 17:00 | 2009-06-17 18:00 | 1h | 22.75d | 0d |  |  | Organizador | 1h | 35 | 35 |
| 122 | 9.2.2 | Obtención permiso celebración evento |  | 2d | 2009-06-17 18:00 | 2009-06-19 18:00 | 121 | 2009-06-17 18:00 | 2009-06-19 18:00 | 2d | 22.75d | 0d |  |  | Organizador; Licencia ayuntamiento | 16h | 590 | 590 |
| 123 | 9.2.3 | Firma contrato uso recinto | milestone | 0d | 2009-06-19 18:00 | 2009-06-19 18:00 | 122 | 2009-06-19 18:00 | 2009-06-19 18:00 | 0d | 22.75d | 0d |  |  | Organizador |  |  |  |
| 124 | 9.2.4 | Cita previa proveedor carpa |  | 1h | 2009-06-19 18:00 | 2009-06-19 19:00 | 123 | 2009-06-19 18:00 | 2009-06-19 19:00 | 1h | 22.75d | 0d |  |  | Organizador | 1h | 35 | 35 |
| 125 | 9.2.5 | Selección carpa |  | 1h | 2009-06-22 10:00 | 2009-06-22 11:00 | 124 | 2009-06-22 10:00 | 2009-06-22 11:00 | 1h | 22.75d | 0d |  |  | Organizador | 1h | 35 | 35 |
| 126 | 9.2.6 | Firma contrato proveedor carpa | milestone | 0d | 2009-06-22 11:00 | 2009-06-22 11:00 | 125 | 2009-06-22 11:00 | 2009-06-22 11:00 | 0d | 22.75d | 23.75d |  | 2009-07-22 19:00 | Organizador |  |  |  |
| 127 | 9.2.7 | Instalación carpa |  | 8h | 2009-07-24 09:00 | 2009-07-24 19:00 | 126 | 2009-07-24 09:00 | 2009-07-24 19:00 | 8h | 14.38d | 0d | start no earlier than 2009-07-24 09:00 |  | Montaje carpa | 8h | 480 | 480 |
| 128 | 9.2.8 | Celebración evento |  | 8h | 2009-07-25 09:00 | 2009-07-25 19:00 | 127 | 2009-07-25 09:00 | 2009-07-25 19:00 | 8h | 14.38d | 0d |  |  | Alquiler carpa |  | 1,000 | 1,000 |
| 129 | 9.2.9 | Retirada carpa |  | 5h | 2009-07-27 09:00 | 2009-07-27 16:00 | 128 | 2009-07-27 09:00 | 2009-07-27 16:00 | 5h | 14.38d | 0d |  |  | Montaje carpa | 5h | 300 | 300 |
| 130 | 9.2.10 | Cierre contrato ayuntamiento | milestone | 0d | 2009-07-27 16:00 | 2009-07-27 16:00 | 129 | 2009-07-27 16:00 | 2009-07-27 16:00 | 0d | 14.38d |  |  |  | Organizador |  |  |  |
| 131 | 9.2.11 | Cierre contrato proveedor carpa | milestone | 0d | 2009-07-27 16:00 | 2009-07-27 16:00 | 129 | 2009-07-27 16:00 | 2009-07-27 16:00 | 0d | 14.38d |  |  |  | Organizador |  |  |  |
| 132 | 10 | **Organización banquete** |  | 43.12d | 2009-06-02 18:00 | 2009-07-31 09:00 |  | 2009-06-02 18:00 | 2009-07-31 09:00 | 43.12d | 11d |  |  |  |  | 48h | 9,310 | 9,310 |
| 133 | 10.1 | Concerta cita previa restaurador |  | 1h | 2009-06-02 18:00 | 2009-06-02 19:00 |  | 2009-06-02 18:00 | 2009-06-02 19:00 | 1h | 18d | 0d |  |  | Organizador | 1h | 35 | 35 |
| 134 | 10.2 | Selección menú boda |  | 2.12d | 2009-06-12 18:00 | 2009-06-18 19:00 | 133 | 2009-06-12 18:00 | 2009-06-18 19:00 | 2.12d | 17d | 0d |  |  | Novia; Novio | 32h |  |  |
| 135 | 10.3 | Prueba menú boda |  | 4h | 2009-06-18 19:00 | 2009-06-19 20:00 | 134 | 2009-06-18 19:00 | 2009-06-19 20:00 | 4h | 17.88d | 0d |  |  | Novio; Novia | 6h |  |  |
| 136 | 10.4 | Firma contrato restaurante | milestone | 0d | 2009-06-19 20:00 | 2009-06-19 20:00 | 135 | 2009-06-19 20:00 | 2009-06-19 20:00 | 0d | 18d | 25d |  | 2009-07-15 19:00 | Organizador |  |  |  |
| 137 | 10.5 | Selección servicio catering |  | 1h | 2009-06-03 11:00 | 2009-06-03 12:00 |  | 2009-06-03 11:00 | 2009-06-03 12:00 | 1h | 30.62d | 0d |  |  | Organizador | 1h | 35 | 35 |
| 138 | 10.6 | Firma contrato catering | milestone | 0d | 2009-06-03 12:00 | 2009-06-03 12:00 | 137 | 2009-06-03 12:00 | 2009-06-03 12:00 | 0d | 30.62d | 37.62d |  | 2009-07-15 19:00 | Organizador |  |  |  |
| 139 | 10.7 | Servicio restaurante boda |  | 8h | 2009-07-25 09:00 | 2009-07-25 19:00 | 136 | 2009-07-25 09:00 | 2009-07-25 19:00 | 8h | 15d | 4d | start no earlier than 2009-07-25 09:00 |  | Menu elegido [10000%] |  | 9,000 | 9,000 |
| 140 | 10.8 | Servicio catering boda |  | 8h | 2009-07-25 09:00 | 2009-07-25 19:00 | 138 | 2009-07-25 09:00 | 2009-07-25 19:00 | 8h | 15d | 4d | start no earlier than 2009-07-25 09:00 |  | Servicio Catering | 8h | 240 | 240 |
| 141 | 10.9 | Pago y Cierre contrato restaurante | milestone | 0d | 2009-07-31 09:00 | 2009-07-31 09:00 | 139 | 2009-07-31 09:00 | 2009-07-31 09:00 | 0d | 11d |  | start no earlier than 2009-07-31 09:00 |  | Organizador |  |  |  |
| 142 | 10.10 | Pago y Cierre contrato catering | milestone | 0d | 2009-07-31 09:00 | 2009-07-31 09:00 | 140 | 2009-07-31 09:00 | 2009-07-31 09:00 | 0d | 11d |  | start no earlier than 2009-07-31 09:00 |  | Organizador |  |  |  |
| 143 | 11 | **Noche de bodas** |  | 30d | 2009-06-20 10:00 | 2009-07-31 09:00 |  | 2009-06-20 10:00 | 2009-07-31 09:00 | 30d | 11d |  |  |  |  | 6h | 470 | 470 |
| 144 | 11.1 | Selección destino noche bodas |  | 1h | 2009-06-20 10:00 | 2009-06-20 11:00 |  | 2009-06-20 10:00 | 2009-06-20 11:00 | 1h | 22d | 0d |  |  | Novio; Novia | 2h |  |  |
| 145 | 11.2 | Selección hotel |  | 2h | 2009-06-20 11:00 | 2009-06-22 10:00 | 144 | 2009-06-20 11:00 | 2009-06-22 10:00 | 2h | 22d | 0d |  |  | Novio; Novia; Organizador | 3h | 35 | 35 |
| 146 | 11.3 | Reserva hotel |  | 1h | 2009-06-22 11:00 | 2009-06-22 12:00 | 145 | 2009-06-22 11:00 | 2009-06-22 12:00 | 1h | 22.62d | 0d |  |  | Organizador | 1h | 35 | 35 |
| 147 | 11.4 | Firma contrato hotel | milestone | 0d | 2009-06-22 12:00 | 2009-06-22 12:00 | 146 | 2009-06-22 12:00 | 2009-06-22 12:00 | 0d | 22.62d | 23.62d |  | 2009-07-22 19:00 | Organizador |  |  |  |
| 148 | 11.5 | Noche de bodas hotel |  | 2d | 2009-07-24 09:00 | 2009-07-26 19:00 | 147 | 2009-07-24 09:00 | 2009-07-26 19:00 | 2d | 15d | 4d | finish no earlier than 2009-07-26 19:00 |  | Reserva hotel |  | 400 | 400 |
| 149 | 11.6 | Cierre contrato hotel | milestone | 0d | 2009-07-31 09:00 | 2009-07-31 09:00 | 148 | 2009-07-31 09:00 | 2009-07-31 09:00 | 0d | 11d |  | start no earlier than 2009-07-31 09:00 |  | Organizador |  |  |  |

| ID | WBS | Task | Duration | Start | Finish | Baseline start | Baseline finish | Baseline duration | Total slack | Constraint | Resources | Work | Cost | Baseline cost |
| --- | --- | --- | --- | --- | --- | --- | --- | --- | --- | --- | --- | --- | --- | --- |
| 150 | 12 | **Reuniones de seguimiento** | 51.12d | 2009-06-02 09:00 | 2009-08-11 10:00 | 2009-06-02 09:00 | 2009-08-11 10:00 | 51.12d | 3.88d |  |  | 11h | 385 | 385 |
| 151 | 12.1 | Reuniones de seguimiento 1 | 1h | 2009-06-02 09:00 | 2009-06-02 10:00 | 2009-06-02 09:00 | 2009-06-02 10:00 | 1h | 54.88d | start no earlier than 2009-06-02 09:00 | Organizador; Novia; Novio | 1h | 35 | 35 |
| 152 | 12.2 | Reuniones de seguimiento 2 | 1h | 2009-06-09 09:00 | 2009-06-09 10:00 | 2009-06-09 09:00 | 2009-06-09 10:00 | 1h | 49.88d | start no earlier than 2009-06-09 09:00 | Organizador; Novia; Novio | 1h | 35 | 35 |
| 153 | 12.3 | Reuniones de seguimiento 3 | 1h | 2009-06-16 09:00 | 2009-06-16 10:00 | 2009-06-16 09:00 | 2009-06-16 10:00 | 1h | 44.88d | start no earlier than 2009-06-16 09:00 | Organizador; Novia; Novio | 1h | 35 | 35 |
| 154 | 12.4 | Reuniones de seguimiento 4 | 1h | 2009-06-23 09:00 | 2009-06-23 10:00 | 2009-06-23 09:00 | 2009-06-23 10:00 | 1h | 39.88d | start no earlier than 2009-06-23 09:00 | Organizador; Novia; Novio | 1h | 35 | 35 |
| 155 | 12.5 | Reuniones de seguimiento 5 | 1h | 2009-06-30 09:00 | 2009-06-30 10:00 | 2009-06-30 09:00 | 2009-06-30 10:00 | 1h | 34.88d | start no earlier than 2009-06-30 09:00 | Organizador; Novia; Novio | 1h | 35 | 35 |
| 156 | 12.6 | Reuniones de seguimiento 6 | 1h | 2009-07-07 09:00 | 2009-07-07 10:00 | 2009-07-07 09:00 | 2009-07-07 10:00 | 1h | 29.88d | start no earlier than 2009-07-07 09:00 | Organizador; Novia; Novio | 1h | 35 | 35 |
| 157 | 12.7 | Reuniones de seguimiento 7 | 1h | 2009-07-14 09:00 | 2009-07-14 10:00 | 2009-07-14 09:00 | 2009-07-14 10:00 | 1h | 24.88d | start no earlier than 2009-07-14 09:00 | Organizador; Novia; Novio | 1h | 35 | 35 |
| 158 | 12.8 | Reuniones de seguimiento 8 | 1h | 2009-07-21 09:00 | 2009-07-21 10:00 | 2009-07-21 09:00 | 2009-07-21 10:00 | 1h | 19.88d | start no earlier than 2009-07-21 09:00 | Organizador; Novia; Novio | 1h | 35 | 35 |
| 159 | 12.9 | Reuniones de seguimiento 9 | 1h | 2009-07-28 09:00 | 2009-07-28 10:00 | 2009-07-28 09:00 | 2009-07-28 10:00 | 1h | 13.88d | start no earlier than 2009-07-28 09:00 | Organizador; Novia; Novio | 1h | 35 | 35 |
| 160 | 12.10 | Reuniones de seguimiento 10 | 1h | 2009-08-04 09:00 | 2009-08-04 10:00 | 2009-08-04 09:00 | 2009-08-04 10:00 | 1h | 8.88d | start no earlier than 2009-08-04 09:00 | Organizador; Novia; Novio | 1h | 35 | 35 |
| 161 | 12.11 | Reuniones de seguimiento 11 | 1h | 2009-08-11 09:00 | 2009-08-11 10:00 | 2009-08-11 09:00 | 2009-08-11 10:00 | 1h | 3.88d | start no earlier than 2009-08-11 09:00 | Organizador; Novia; Novio | 1h | 35 | 35 |
