# Proyecto Cortometraje

Schedule from MS Project, 2005-03-07 to 2005-12-23, costs in €.

## Calendars

- Estándar: Mon-Fri 08:00-12:00, 13:00-17:00; Sat-Sun off.

## Resources

| Resource | Unit | Rate | Cost per use |
| --- | --- | --- | --- |
| Cámara 16 mm |  | 6.25 |  |
| Película 16 mm | 100 Pies | 20 |  |
| 500 watios de luz |  | 2.5 |  |
| Anne L. Paper |  | 9.38 |  |
| Cámara Boom |  |  |  |
| Clair Hector |  | 20 |  |
| Grúa |  |  |  |
| Daniel Penn |  | 9.38 |  |
| David Campbell |  | 9.38 |  |
| Pie rodante |  |  |  |
| Doug Hampton |  | 13 |  |
| Laboratorio Edición |  | 25 | 25 |
| Electricista |  | 22 |  |
| Eric Lang |  | 15.5 |  |
| Eric Miller |  | 9.38 |  |
| Florian Voss |  | 22 |  |
| Frank Lee |  | 14 |  |
| Jan Miksovsky |  | 18.75 |  |
| Jim Hance |  | 9.38 |  |
| Jo Brown |  | 18.75 |  |
| Johnathan Perrera |  | 22 |  |
| Joseph Matthews |  | 9.38 |  |
| Joshua Randall |  | 12 |  |
| Kathryn Wilson |  | 5 | 100 |
| Keith Harris |  | 14 |  |
| Kim Yoshida |  | 9.4 |  |
| Linda Kobara |  | 24 |  |
| Lisa Garmaise |  | 9 |  |
| Mark Hassall |  | 23.75 |  |
| Max Benson |  | 24 |  |
| Megan Sherman |  | 18 |  |
| Michael Patten |  | 17.5 |  |
| Pat Kirtland |  | 5.62 |  |
| Paul Borm |  | 25 |  |
| Kit reflector |  |  |  |
| Richard Lum |  | 15.62 |  |
| Salman Mughal |  | 18 |  |
| Scott Cooper |  | 19.38 |  |
| Sue Jackson |  | 9.38 |  |
| Ted Bremer |  | 14 |  |
| Tim O'Brien |  | 14 |  |

## Schedule

| ID | WBS | Task | Type | Duration | Start | Finish | Predecessors | Total slack | Resources | Work | Cost |
| --- | --- | --- | --- | --- | --- | --- | --- | --- | --- | --- | --- |
| 1 | 1 | **Preproducción** |  | 58.5d | 2005-03-07 | 2005-05-26 |  | 0d |  | 1172h | 21,426.5 |
| 2 | 1.1 | Revisar guión |  | 0.5w | 2005-03-07 | 2005-03-09 |  | 0d | Scott Cooper; Clair Hector | 40h | 787.5 |
| 3 | 1.2 | Reparto del guión |  | 1w | 2005-03-09 | 2005-03-16 | 2 | 0d | Scott Cooper; Johnathan Perrera | 80h | 1,655 |
| 4 | 1.3 | Reunir personal de producción |  | 1mo | 2005-03-16 | 2005-04-13 | 3 | 0d | Scott Cooper; Kim Yoshida; Johnathan Perrera | 480h | 8,124 |
| 5 | 1.4 | Explorar lugares |  | 2w | 2005-04-13 | 2005-04-27 | 4 | 0d | Jo Brown; Jan Miksovsky; Max Benson | 240h | 4,920 |
| 6 | 1.5 | Elegir lugares |  | 1w | 2005-04-27 | 2005-05-04 | 5 | 0d | Scott Cooper; Clair Hector; Max Benson | 120h | 2,535 |
| 7 | 1.6 | Realizar audiciones |  | 1w | 2005-05-04 | 2005-05-11 | 6 | 0d | Clair Hector; Scott Cooper; Doug Hampton [50%] | 100h | 1,835 |
| 8 | 1.7 | Solicitar permisos de filmación |  | 1w | 2005-05-11 | 2005-05-18 | 7 | 0d | Kim Yoshida | 40h | 376 |
| 9 | 1.8 | Reservar equipamiento de cámara |  | 3d | 2005-05-18 | 2005-05-23 | 8 | 0d | Jan Miksovsky; Eric Lang | 48h | 822 |
| 10 | 1.9 | Reservar equipamiento de sonido |  | 3d | 2005-05-23 | 2005-05-26 | 9 | 0d | Eric Lang | 24h | 372 |
| 11 | 1.10 | ¡Preproducción completada! | milestone | 0d | 2005-05-26 | 2005-05-26 | 10 | 0d |  |  |  |
| 12 | 2 | **Producción** |  | 52.22d | 2005-05-26 | 2005-08-08 | 1 | 0d |  | 2231h | 31,101.85 |
| 13 | 2.1 | **Escena 7** |  | 5.4d | 2005-05-26 | 2005-06-02 |  | 0d |  | 228h | 3,220 |
| 14 | 2.1.1 | Escena 7 montaje |  | 1.2d | 2005-05-26 | 2005-05-27 |  | 0d | Jo Brown; Max Benson; Electricista [50%] | 24h | 516 |
| 15 | 2.1.2 | Escena 7 ensayos |  | 8h | 2005-05-27 | 2005-05-30 | 14 | 0d | Scott Cooper; Jo Brown; Paul Borm [50%]; Joseph Matthews; Sue Jackson; Jan Miksovsky | 44h | 705 |
| 16 | 2.1.3 | Escena 7 rodaje |  | 8h | 2005-05-30 | 2005-05-31 | 15 | 0d | Scott Cooper; Jo Brown; Joseph Matthews; Sue Jackson; Frank Lee; Keith Harris; Ted Bremer; Cámara 16 mm [300%]; 500 watios de luz [200%]; Joshua Randall; Megan Sherman; Tim O'Brien; Jan Miksovsky; Cámara Boom | 136h | 1,483 |
| 17 | 2.1.4 | Escena 7 desmontar |  | 1.2d | 2005-05-31 | 2005-06-01 | 16 | 0d | Jo Brown; Max Benson; Electricista [50%] | 24h | 516 |
| 18 | 2.1.5 | Escena 7-procedimientos diarios |  | 1d | 2005-06-01 | 2005-06-02 | 17 | 0d |  |  |  |
| 19 | 2.2 | **Escena 3** |  | 4d | 2005-06-02 | 2005-06-08 | 13 | 0d |  | 268h | 3,370 |
| 20 | 2.2.1 | Escena 3 montaje |  | 1d | 2005-06-02 | 2005-06-03 |  | 0d | Jo Brown; Max Benson; Electricista | 24h | 518 |
| 21 | 2.2.2 | Escena 3 ensayos |  | 1d | 2005-06-03 | 2005-06-06 | 20 | 0d | Scott Cooper; Jo Brown; Eric Miller; Jim Hance; Anne L. Paper; Joseph Matthews; Jan Miksovsky | 56h | 755 |
| 22 | 2.2.3 | Escena 3 rodaje |  | 8h | 2005-06-06 | 2005-06-07 | 21 | 0d | Scott Cooper; Jo Brown; Eric Miller; Jim Hance; Anne L. Paper; Joseph Matthews; Tim O'Brien; Megan Sherman; Doug Hampton [50%]; Keith Harris; Cámara 16 mm [200%]; 500 watios de luz [400%]; Pie rodante; Frank Lee; Jan Miksovsky; Ted Bremer; Cámara Boom | 164h | 1,579 |
| 23 | 2.2.4 | Escena 3 desmontar |  | 1d | 2005-06-07 | 2005-06-08 | 22 | 0d | Jo Brown; Max Benson; Electricista | 24h | 518 |
| 24 | 2.2.5 | Escena 3-procedimientos diarios |  | 1d | 2005-06-07 | 2005-06-08 | 22 | 0d |  |  |  |

| ID | WBS | Task | Duration | Start | Finish | Predecessors | Total slack | Resources | Work | Cost |
| --- | --- | --- | --- | --- | --- | --- | --- | --- | --- | --- |
| 25 | 2.3 | **Escena 1** | 6d | 2005-06-08 | 2005-06-16 | 19 | 0d |  | 324h | 5,150 |
| 26 | 2.3.1 | Escena 1 organización | 3d | 2005-06-08 | 2005-06-13 |  | 0d | Jo Brown; Max Benson; Electricista [200%] | 96h | 2,082 |
| 27 | 2.3.2 | Escena 1 ensayos | 1d | 2005-06-13 | 2005-06-14 | 26 | 0d | Scott Cooper; Jo Brown; Paul Borm [50%]; David Campbell; Eric Miller; Sue Jackson; Jan Miksovsky | 52h | 780 |
| 28 | 2.3.3 | Escena 1 rodaje | 8h | 2005-06-14 | 2005-06-15 | 27 | 0d | Scott Cooper; Jo Brown; Paul Borm [50%]; David Campbell; Eric Miller; Sue Jackson; Tim O'Brien; Frank Lee; Megan Sherman; Doug Hampton [50%]; Keith Harris; Ted Bremer; Cámara 16 mm [300%]; 500 watios de luz; Jan Miksovsky; Pie rodante; Cámara Boom | 144h | 1,594 |
| 29 | 2.3.4 | Escena 1 desmontar | 1d | 2005-06-15 | 2005-06-16 | 28 | 0d | Jo Brown; Max Benson; Electricista [200%] | 32h | 694 |
| 30 | 2.3.5 | Escena 1-procedimientos diarios | 1d | 2005-06-15 | 2005-06-16 | 28 | 0d |  |  |  |
| 31 | 2.4 | **Escena 2** | 4d | 2005-06-16 | 2005-06-22 | 25 | 0d |  | 138h | 1,841.5 |
| 32 | 2.4.1 | Escena 2 organización | 1d | 2005-06-16 | 2005-06-17 |  | 0d | Jo Brown; Max Benson; Electricista | 24h | 518 |
| 33 | 2.4.2 | Escena 2 ensayos | 8h | 2005-06-17 | 2005-06-20 | 32 | 0d | Scott Cooper; Doug Hampton [50%]; David Campbell; Anne L. Paper; Jan Miksovsky | 36h | 507 |
| 34 | 2.4.3 | Escena 2 rodaje | 4h | 2005-06-20 | 2005-06-21 | 33 | 0d | Scott Cooper; Doug Hampton [50%]; Anne L. Paper; Tim O'Brien; Frank Lee; Keith Harris; Ted Bremer; Cámara 16 mm [200%]; 500 watios de luz [300%]; Jan Miksovsky; David Campbell; Cámara Boom; Grúa; Pie rodante | 66h | 557.5 |
| 35 | 2.4.4 | Escena 2 desmontar | 0.5d | 2005-06-21 | 2005-06-21 | 34 | 0d | Jo Brown; Max Benson; Electricista | 12h | 259 |
| 36 | 2.4.5 | Escena 2-procedimientos diarios | 1d | 2005-06-21 | 2005-06-22 | 35 | 0d |  |  |  |
| 37 | 2.5 | **Escena 5** | 5.5d | 2005-06-22 | 2005-06-30 | 31 | 0d |  | 280h | 3,566 |
| 38 | 2.5.1 | Escena 5 organización | 2.5d | 2005-06-22 | 2005-06-27 |  | 0d | Jo Brown; Max Benson | 40h | 855 |
| 39 | 2.5.2 | Escena 5 ensayos | 1d | 2005-06-27 | 2005-06-28 | 38 | 0d | Scott Cooper; Jo Brown; Eric Miller; David Campbell; Sue Jackson; Daniel Penn; Anne L. Paper; Jan Miksovsky [50%] | 60h | 755 |
| 40 | 2.5.3 | Escena 5 rodaje | 8h | 2005-06-28 | 2005-06-29 | 39 | 0d | Scott Cooper; Jo Brown; Eric Miller; David Campbell; Sue Jackson; Daniel Penn; Anne L. Paper; Tim O'Brien; Frank Lee; Megan Sherman; Doug Hampton [50%]; Keith Harris; Ted Bremer; Cámara 16 mm [200%]; 500 watios de luz [200%]; Grúa; Jan Miksovsky; Cámara Boom; Pie rodante | 164h | 1,614 |
| 41 | 2.5.4 | Escena 5 desmontar | 1d | 2005-06-29 | 2005-06-30 | 40 | 0d | Jo Brown; Max Benson | 16h | 342 |
| 42 | 2.5.5 | Escena 5-procedimientos diarios | 1d | 2005-06-29 | 2005-06-30 | 40 | 0d |  |  |  |
| 43 | 2.6 | **Escena 6** | 13.57d | 2005-06-30 | 2005-07-19 | 37 | 0d |  | 556h | 7,605.1 |
| 44 | 2.6.1 | Escena 6 organización | 6d | 2005-06-30 | 2005-07-08 |  | 0d | Jo Brown; Max Benson | 96h | 2,052 |
| 45 | 2.6.2 | Escena 6 ensayos | 2d | 2005-07-08 | 2005-07-12 | 44 | 0d | Scott Cooper; Jo Brown; Doug Hampton [50%]; Paul Borm [50%]; David Campbell; Sue Jackson; Anne L. Paper; Jim Hance; Daniel Penn; Jan Miksovsky [50%] | 136h | 1,814 |
| 46 | 2.6.3 | Escena 6 rodaje | 12.55h | 2005-07-12 | 2005-07-13 | 45 | 0d | Scott Cooper; Jo Brown; Doug Hampton [50%]; Paul Borm [50%]; David Campbell; Sue Jackson; Anne L. Paper; Jim Hance; Daniel Penn; Frank Lee; Megan Sherman; Keith Harris; Ted Bremer; Cámara 16 mm [299.9%]; 500 watios de luz [299.9%]; Pie rodante; Grúa; Joshua Randall; Tim O'Brien | 276h | 2,713.1 |
| 47 | 2.6.4 | Escena 6 desmontar | 3d | 2005-07-13 | 2005-07-18 | 46 | 0d | Jo Brown; Max Benson | 48h | 1,026 |
| 48 | 2.6.5 | Escena 6-procedimientos diarios | 1d | 2005-07-18 | 2005-07-19 | 47 | 0d |  |  |  |

| ID | WBS | Task | Duration | Start | Finish | Predecessors | Total slack | Resources | Work | Cost |
| --- | --- | --- | --- | --- | --- | --- | --- | --- | --- | --- |
| 49 | 2.7 | **Escena 8** | 9d | 2005-07-19 | 2005-08-01 | 43 | 0d |  | 346h | 4,825.5 |
| 50 | 2.7.1 | Escena 8 organización | 3d | 2005-07-19 | 2005-07-22 |  | 0d | Jo Brown; Max Benson | 48h | 1,026 |
| 51 | 2.7.2 | Escena 8 ensayos | 2.5d | 2005-07-22 | 2005-07-27 | 50 | 0d | Scott Cooper; Jo Brown; Doug Hampton [50%]; Paul Borm [50%]; David Campbell; Sue Jackson; Eric Miller; Jan Miksovsky [50%] | 130h | 1,892.5 |
| 52 | 2.7.3 | Escena 8 rodaje | 8h | 2005-07-27 | 2005-07-28 | 51 | 0d | Scott Cooper; Jo Brown; Doug Hampton [50%]; Paul Borm [50%]; David Campbell; Sue Jackson; Eric Miller; Tim O'Brien; Frank Lee; Megan Sherman; Keith Harris; Ted Bremer; Cámara 16 mm [200%]; 500 watios de luz; Pie rodante [200%]; Cámara Boom; Grúa | 144h | 1,394 |
| 53 | 2.7.4 | Escena 8 desmontar | 1.5d | 2005-07-28 | 2005-07-29 | 52 | 0d | Jo Brown; Max Benson | 24h | 513 |
| 54 | 2.7.5 | Escena 8-procedimientos diarios | 1d | 2005-07-29 | 2005-08-01 | 53 | 0d |  |  |  |
| 55 | 2.8 | **Escena 4** | 4.75d | 2005-08-01 | 2005-08-08 | 49 | 0d |  | 91h | 1,523.75 |
| 56 | 2.8.1 | Escena 4 organización | 1.5d | 2005-08-01 | 2005-08-03 |  | 0d | Jo Brown; Max Benson | 24h | 513 |
| 57 | 2.8.2 | Escena 4 ensayos | 4h | 2005-08-03 | 2005-08-03 | 56 | 0d | Scott Cooper; Doug Hampton [50%]; Anne L. Paper; Joseph Matthews; Jan Miksovsky [50%] | 16h | 216 |
| 58 | 2.8.3 | Escena 4 rodaje | 2h | 2005-08-03 | 2005-08-04 | 57 | 0d | Scott Cooper; Doug Hampton [50%]; Anne L. Paper; Joseph Matthews; Frank Lee; Megan Sherman; Keith Harris; Cámara 16 mm [200%]; 500 watios de luz [200%]; Jan Miksovsky; Ted Bremer; Cámara Boom | 27h | 281.75 |
| 59 | 2.8.4 | Escena 4 desmontar | 1.5d | 2005-08-04 | 2005-08-05 | 58 | 0d | Jo Brown; Max Benson | 24h | 513 |
| 60 | 2.8.5 | Escena 4-procedimientos diarios | 1d | 2005-08-05 | 2005-08-08 | 59 | 0d |  |  |  |
| 61 | 3 | **Posproducción** | 98.75d | 2005-08-08 | 2005-12-23 | 12 | 0d |  | 1830h | 29,979.33 |
| 62 | 3.1 | Montaje de película | 8.5d | 2005-08-08 | 2005-08-19 |  | 0d | Laboratorio Edición; Florian Voss | 136h | 3,221 |
| 63 | 3.2 | Grabación de narración aproximada | 12d | 2005-08-19 | 2005-09-06 | 62 | 0d | David Campbell; Michael Patten | 192h | 2,580 |
| 64 | 3.3 | Montaje de la edición impresa | 10d | 2005-09-06 | 2005-09-20 | 63 | 0d | Clair Hector; Kim Yoshida; Lisa Garmaise; Richard Lum | 320h | 4,322 |
| 65 | 3.4 | Montaje preliminar | 5d | 2005-09-20 | 2005-09-27 | 64 | 0d | Clair Hector; Richard Lum | 80h | 1,425 |
| 66 | 3.5 | Montaje final | 10d | 2005-09-27 | 2005-10-11 | 65 | 0d | Clair Hector; Richard Lum; Lisa Garmaise; Kim Yoshida; Laboratorio Edición | 400h | 6,347 |
| 67 | 3.6 | Proyección de la prueba final | 1d | 2005-10-11 | 2005-10-12 | 66 | 0d | Clair Hector; Jo Brown; Mark Hassall; Scott Cooper | 32h | 655 |
| 68 | 3.7 | Grabación de la narración final | 13.33d | 2005-10-12 | 2005-10-31 | 67 | 0d | David Campbell; Michael Patten; Scott Cooper | 320h | 4,933.33 |
| 69 | 3.8 | Añadir créditos | 1w | 2005-10-31 | 2005-11-07 | 68 | 0d | Jo Brown; Michael Patten; Laboratorio Edición | 120h | 2,475 |
| 70 | 3.9 | Añadir música final | 16d | 2005-11-07 | 2005-11-29 | 69 | 0d | Michael Patten | 128h | 2,240 |
| 71 | 3.10 | Impresión de internegativos de la película | 3.25d | 2005-11-29 | 2005-12-02 | 70 | 0d | Florian Voss | 26h | 572 |
| 72 | 3.11 | Reproducción de masters de cinta de audio | 12d | 2005-12-02 | 2005-12-20 | 71 | 0d | Doug Hampton [50%] | 48h | 624 |
| 73 | 3.12 | Archivar película master y cinta de audio | 1.67d | 2005-12-20 | 2005-12-22 | 72 | 0d | Doug Hampton [50%]; Laboratorio Edición | 20h | 445 |
| 74 | 3.13 | Entrega del master al distribuidor | 1d | 2005-12-22 | 2005-12-23 | 73 | 0d | Michael Patten | 8h | 140 |
