# Proyecto Cortometraje

Schedule from MS Project, 2005-03-07 to 2005-12-20, costs in €.

## Calendars

- Rodaje nocturno: Mon 23:00-24:00; Tue-Fri 00:00-03:00, 04:00-08:00, 23:00-24:00; Sat 00:00-03:00, 04:00-08:00; Sun off.
- Estándar: Mon-Fri 08:00-12:00, 13:00-17:00; Sat-Sun off.

## Resources

| Resource | Unit | Rate | Cost per use |
| --- | --- | --- | --- |
| Cámara 16mm |  | 6.25 |  |
| Película 16mm | 100 Pies | 20 |  |
| 500 watios de luz |  | 2.5 |  |
| Anne L. Paper |  | 9.38 |  |
| Cámera Boom |  |  |  |
| Clair Hector |  | 20 |  |
| Grúa |  |  |  |
| Daniel Penn |  | 9.38 |  |
| David Campbell |  | 9.38 |  |
| Pie rodante |  |  |  |
| Doug Hampton |  | 13 |  |
| Laboratorio Edición |  | 25 | 25 |
| Electricista |  | 22 |  |
| Eric Lang |  | 15.5 |  |
| Eric Miller |  | 9.38 |  |
| Florian Voss |  | 22 |  |
| Frank Lee |  | 14 |  |
| Jan Miksovsky |  | 18.75 |  |
| Jim Hance |  | 9.38 |  |
| Jo Brown |  | 18.75 |  |
| Johnathan Perrera |  | 22 |  |
| Joseph Matthews |  | 9.38 |  |
| Joshua Randall |  | 12 |  |
| Kathryn Wilson |  | 5 | 100 |
| Keith Harris |  | 14 |  |
| Kim Yoshida |  | 9.4 |  |
| Linda Kobara |  | 24 |  |
| Lisa Garmaise |  | 9 |  |
| Mark Hassall |  | 23.75 |  |
| Max Benson |  | 24 |  |
| Megan Sherman |  | 18 |  |
| Michael Patten |  | 17.5 |  |
| Pat Kirtland |  | 5.62 |  |
| Paul Borm |  | 25 |  |
| Kit reflector |  |  |  |
| Richard Lum |  | 15.62 |  |
| Salman Mughal |  | 18 |  |
| Scott Cooper |  | 19.37 |  |
| Sue Jackson |  | 9.38 |  |
| Ted Bremer |  | 14 |  |
| Tim O'Brien |  | 14 |  |

## Schedule

| ID | WBS | Task | Type | Duration | Start | Finish | Predecessors | Baseline start | Baseline finish | Baseline duration | Total slack | Free slack | Constraint | Deadline | Calendar | Resources | Work | Cost | Baseline cost |
| --- | --- | --- | --- | --- | --- | --- | --- | --- | --- | --- | --- | --- | --- | --- | --- | --- | --- | --- | --- |
| 1 | 1 | **Preproducción** |  | 57.5d | 2005-03-07 | 2005-05-25 |  | 2005-03-07 | 2005-05-25 | 57.5d | 0.75d | 0d |  |  |  |  | 1280h | 24,166 | 24,166 |
| 2 | 1.1 | Revisar guión |  | 1w | 2005-03-07 | 2005-03-11 |  | 2005-03-07 | 2005-03-11 | 1w | 0.75d | 0d |  |  |  | Scott Cooper [50%]; Clair Hector | 48h | 947.5 | 947.5 |
| 3 | 1.2 | Reparto del guión |  | 1w | 2005-03-14 | 2005-03-18 | 2 | 2005-03-14 | 2005-03-18 | 1w | 0.75d | 0d |  |  |  | Scott Cooper; Johnathan Perrera; Clair Hector | 120h | 2,455 | 2,455 |
| 4 | 1.3 | Reunir personal de producción |  | 1mo | 2005-03-21 | 2005-04-19 | 3 | 2005-03-21 | 2005-04-19 | 1mo | 0.75d | 0d |  |  |  | Scott Cooper; Kim Yoshida; Johnathan Perrera | 480h | 8,124 | 8,124 |
| 5 | 1.4 | Explorar lugares |  | 2w | 2005-04-20 | 2005-05-03 | 4 | 2005-04-20 | 2005-05-03 | 2w | 0.75d | 0d |  |  |  | Jo Brown; Jan Miksovsky; Max Benson | 240h | 4,920 | 4,920 |
| 6 | 1.5 | Elegir lugares |  | 1w | 2005-05-04 | 2005-05-10 | 5 | 2005-05-04 | 2005-05-10 | 1w | 0.75d | 0d |  |  |  | Scott Cooper; Clair Hector; Max Benson | 120h | 2,535 | 2,535 |
| 7 | 1.6 | Realizar audiciones |  | 1w | 2005-05-11 | 2005-05-17 | 6 | 2005-05-11 | 2005-05-17 | 1w | 0.75d | 0d |  |  |  | Clair Hector; Scott Cooper; Doug Hampton [50%] | 100h | 1,887 | 1,887 |
| 8 | 1.7 | Solicitar permisos de filmación |  | 1w | 2005-05-18 | 2005-05-24 | 7 | 2005-05-18 | 2005-05-24 | 1w | 0.75d | 0d |  |  |  | Kim Yoshida | 40h | 876 | 876 |
| 9 | 1.8 | Reservar equipamiento de cámara |  | 3d | 2005-05-20 | 2005-05-25 | 8FS-5% | 2005-05-20 | 2005-05-25 | 3d | 0.75d | 0d |  |  |  | Jan Miksovsky; Eric Lang | 48h | 822 | 822 |
| 10 | 1.9 | Reservar equipamiento de sonido |  | 3d | 2005-05-20 | 2005-05-25 | 9SS | 2005-05-20 | 2005-05-25 | 3d | 0.75d | 0d |  |  |  | Eric Lang | 24h | 372 | 372 |
| 11 | 1.10 | ¡Preproducción completada! | milestone | 0d | 2005-05-25 | 2005-05-25 | 10 | 2005-05-25 | 2005-05-25 | 0d | 0.75d |  |  | 2005-05-27 |  |  |  |  |  |
| 12 | 1.11 | **Reunión del personal para la planificación** |  | 45.25d | 2005-03-14 | 2005-05-16 |  | 2005-03-14 | 2005-05-16 | 45.25d | 8d |  |  |  |  |  | 60h | 1,227.5 | 1,227.5 |
| 13 | 1.11.1 | Reunión del personal para la planificación 1 |  | 2h | 2005-03-14 | 2005-03-14 |  | 2005-03-14 | 2005-03-14 | 2h | 53d |  | start no earlier than 2005-03-14 |  |  | Clair Hector; Johnathan Perrera; Scott Cooper | 6h | 122.75 | 122.75 |
| 14 | 1.11.2 | Reunión del personal para la planificación 2 |  | 2h | 2005-03-21 | 2005-03-21 |  | 2005-03-21 | 2005-03-21 | 2h | 48d |  | start no earlier than 2005-03-21 |  |  | Clair Hector; Johnathan Perrera; Scott Cooper | 6h | 122.75 | 122.75 |
| 15 | 1.11.3 | Reunión del personal para la planificación 3 |  | 2h | 2005-03-28 | 2005-03-28 |  | 2005-03-28 | 2005-03-28 | 2h | 43d |  | start no earlier than 2005-03-28 |  |  | Clair Hector; Johnathan Perrera; Scott Cooper | 6h | 122.75 | 122.75 |
| 16 | 1.11.4 | Reunión del personal para la planificación 4 |  | 2h | 2005-04-04 | 2005-04-04 |  | 2005-04-04 | 2005-04-04 | 2h | 38d |  | start no earlier than 2005-04-04 |  |  | Clair Hector; Johnathan Perrera; Scott Cooper | 6h | 122.75 | 122.75 |
| 17 | 1.11.5 | Reunión del personal para la planificación 5 |  | 2h | 2005-04-11 | 2005-04-11 |  | 2005-04-11 | 2005-04-11 | 2h | 33d |  | start no earlier than 2005-04-11 |  |  | Clair Hector; Johnathan Perrera; Scott Cooper | 6h | 122.75 | 122.75 |
| 18 | 1.11.6 | Reunión del personal para la planificación 6 |  | 2h | 2005-04-18 | 2005-04-18 |  | 2005-04-18 | 2005-04-18 | 2h | 28d |  | start no earlier than 2005-04-18 |  |  | Clair Hector; Johnathan Perrera; Scott Cooper | 6h | 122.75 | 122.75 |
| 19 | 1.11.7 | Reunión del personal para la planificación 7 |  | 2h | 2005-04-25 | 2005-04-25 |  | 2005-04-25 | 2005-04-25 | 2h | 23d |  | start no earlier than 2005-04-25 |  |  | Clair Hector; Johnathan Perrera; Scott Cooper | 6h | 122.75 | 122.75 |
| 20 | 1.11.8 | Reunión del personal para la planificación 8 |  | 2h | 2005-05-02 | 2005-05-02 |  | 2005-05-02 | 2005-05-02 | 2h | 18d |  | start no earlier than 2005-05-02 |  |  | Clair Hector; Johnathan Perrera; Scott Cooper | 6h | 122.75 | 122.75 |
| 21 | 1.11.9 | Reunión del personal para la planificación 9 |  | 2h | 2005-05-09 | 2005-05-09 |  | 2005-05-09 | 2005-05-09 | 2h | 13d |  | start no earlier than 2005-05-09 |  |  | Clair Hector; Johnathan Perrera; Scott Cooper | 6h | 122.75 | 122.75 |
| 22 | 1.11.10 | Reunión del personal para la planificación 10 |  | 2h | 2005-05-16 | 2005-05-16 |  | 2005-05-16 | 2005-05-16 | 2h | 8d |  | start no earlier than 2005-05-16 |  |  | Clair Hector; Johnathan Perrera; Scott Cooper | 6h | 122.75 | 122.75 |
| 23 | 2 | **Producción** |  | 48.5d | 2005-05-25 | 2005-08-02 | 1 | 2005-05-25 | 2005-08-02 | 48.5d | 0d |  |  | 2005-08-19 |  |  | 2188h | 36,380.95 | 36,380.95 |
| 24 | 2.1 | **Escena 7** |  | 4.5d | 2005-05-25 | 2005-06-01 |  | 2005-05-25 | 2005-06-01 | 4.5d | 0d |  |  |  |  |  | 215h | 3,702.5 | 3,702.5 |
| 25 | 2.1.1 | Escena 7 montaje |  | 6h | 2005-05-25 | 2005-05-26 |  | 2005-05-25 | 2005-05-26 | 6h | 0.75d | 0d |  |  |  | Jo Brown; Max Benson; Electricista [50%] | 15h | 322.5 | 322.5 |
| 26 | 2.1.2 | Escena 7 ensayos |  | 8h | 2005-05-26 | 2005-05-27 | 25 | 2005-05-26 | 2005-05-27 | 8h | 0.75d | 0d |  |  |  | Scott Cooper; Jo Brown; Paul Borm [50%]; Joseph Matthews; Sue Jackson; Jan Miksovsky | 44h | 705 | 705 |
| 27 | 2.1.3 | Escena 7 rodaje |  | 8h | 2005-05-27 | 2005-05-30 | 26 | 2005-05-27 | 2005-05-30 | 8h | 0.75d | 0d |  |  |  | Scott Cooper; Jo Brown; Joseph Matthews; Sue Jackson; Frank Lee; Keith Harris; Ted Bremer; Cámara 16mm [300%]; 500 watios de luz [200%]; Joshua Randall; Megan Sherman; Tim O'Brien; Jan Miksovsky; Cámera Boom; Película 16mm [5 100 Pies] | 136h | 2,245 | 2,245 |
| 28 | 2.1.4 | Escena 7 desmontar |  | 8h | 2005-05-30 | 2005-05-31 | 27 | 2005-05-30 | 2005-05-31 | 8h | 0.75d |  |  |  |  | Jo Brown; Max Benson; Electricista [50%] | 20h | 430 | 430 |
| 29 | 2.1.5 | Escena 7-procesos diarios |  | 1d | 2005-05-31 | 2005-06-01 | 28 | 2005-05-31 | 2005-06-01 | 1d | 0d |  |  |  | Rodaje nocturno |  |  |  |  |

| ID | WBS | Task | Duration | Start | Finish | Predecessors | Baseline start | Baseline finish | Baseline duration | Total slack | Free slack | Constraint | Calendar | Resources | Work | Cost | Baseline cost |
| --- | --- | --- | --- | --- | --- | --- | --- | --- | --- | --- | --- | --- | --- | --- | --- | --- | --- |
| 30 | 2.2 | **Escena 3** | 4d | 2005-06-01 | 2005-06-06 | 24 | 2005-06-01 | 2005-06-06 | 4d | 0d |  |  |  |  | 268h | 4,180.4 | 4,180.4 |
| 31 | 2.2.1 | Escena 3 montaje | 1d | 2005-06-01 | 2005-06-01 |  | 2005-06-01 | 2005-06-01 | 1d | 0d |  | start no earlier than 2004-05-24 |  | Jo Brown; Max Benson; Electricista | 24h | 518 | 518 |
| 32 | 2.2.2 | Escena 3 ensayos | 1d | 2005-06-02 | 2005-06-02 | 31 | 2005-06-02 | 2005-06-02 | 1d | 0d |  |  |  | Scott Cooper; Jo Brown; Eric Miller; Jim Hance; Anne L. Paper; Joseph Matthews; Jan Miksovsky | 56h | 755 | 755 |
| 33 | 2.2.3 | Escena 3 rodaje | 8h | 2005-06-03 | 2005-06-03 | 32 | 2005-06-03 | 2005-06-03 | 8h | 0d |  |  |  | Scott Cooper; Jo Brown; Eric Miller; Jim Hance; Anne L. Paper; Joseph Matthews; Tim O'Brien; Megan Sherman; Doug Hampton [50%]; Keith Harris; Cámara 16mm [200%]; 500 watios de luz [400%]; Pie rodante; Frank Lee; Jan Miksovsky; Ted Bremer; Cámera Boom; Película 16mm [5 100 Pies] | 164h | 2,389.4 | 2,389.4 |
| 34 | 2.2.4 | Escena 3 desmontar | 1d | 2005-06-06 | 2005-06-06 | 33 | 2005-06-06 | 2005-06-06 | 1d | 0d |  |  |  | Jo Brown; Max Benson; Electricista | 24h | 518 | 518 |
| 35 | 2.2.5 | Escena 3-procesos diarios | 1d | 2005-06-03 | 2005-06-04 | 33 | 2005-06-03 | 2005-06-04 | 1d | 1d |  |  | Rodaje nocturno |  |  |  |  |
| 36 | 2.3 | **Escena 1** | 6d | 2005-06-07 | 2005-06-14 | 30 | 2005-06-07 | 2005-06-14 | 6d | 0d |  |  |  |  | 324h | 5,960.4 | 5,960.4 |
| 37 | 2.3.1 | Escena 1 montaje | 3d | 2005-06-07 | 2005-06-09 |  | 2005-06-07 | 2005-06-09 | 3d | 0d |  |  |  | Jo Brown; Max Benson; Electricista [200%] | 96h | 2,082 | 2,082 |
| 38 | 2.3.2 | Escena 1 ensayos | 1d | 2005-06-10 | 2005-06-10 | 37 | 2005-06-10 | 2005-06-10 | 1d | 0d |  |  |  | Scott Cooper; Jo Brown; Paul Borm [50%]; David Campbell; Eric Miller; Sue Jackson; Jan Miksovsky | 52h | 780 | 780 |
| 39 | 2.3.3 | Escena 1 rodaje | 8h | 2005-06-13 | 2005-06-13 | 38 | 2005-06-13 | 2005-06-13 | 8h | 0d |  |  |  | Scott Cooper; Jo Brown; Paul Borm [50%]; David Campbell; Eric Miller; Sue Jackson; Tim O'Brien; Frank Lee; Megan Sherman; Doug Hampton [50%]; Keith Harris; Ted Bremer; Cámara 16mm [300%]; 500 watios de luz; Jan Miksovsky; Pie rodante; Cámera Boom; Película 16mm [5 100 Pies] | 144h | 2,404.4 | 2,404.4 |
| 40 | 2.3.4 | Escena 1 desmontar | 1d | 2005-06-14 | 2005-06-14 | 39 | 2005-06-14 | 2005-06-14 | 1d | 0d |  |  |  | Jo Brown; Max Benson; Electricista [200%] | 32h | 694 | 694 |
| 41 | 2.3.5 | Escena 1-procesos diarios | 1d | 2005-06-13 | 2005-06-14 | 39 | 2005-06-13 | 2005-06-14 | 1d | 1d |  |  | Rodaje nocturno |  |  |  |  |
| 42 | 2.4 | **Escena 2** | 3d | 2005-06-15 | 2005-06-18 | 36 | 2005-06-15 | 2005-06-18 | 3d | 0d |  |  |  |  | 138h | 2,257.1 | 2,257.1 |
| 43 | 2.4.1 | Escena 2 montaje | 1d | 2005-06-15 | 2005-06-15 |  | 2005-06-15 | 2005-06-15 | 1d | 0d |  |  |  | Jo Brown; Max Benson; Electricista | 24h | 518 | 518 |
| 44 | 2.4.2 | Escena 2 ensayos | 8h | 2005-06-16 | 2005-06-16 | 43 | 2005-06-16 | 2005-06-16 | 8h | 0d |  |  |  | Scott Cooper; Doug Hampton [50%]; David Campbell; Anne L. Paper; Jan Miksovsky | 36h | 517.4 | 517.4 |
| 45 | 2.4.3 | Escena 2 rodaje | 4h | 2005-06-17 | 2005-06-17 | 44 | 2005-06-16 | 2005-06-16 | 4h | 0d |  |  |  | Scott Cooper; Doug Hampton [50%]; Anne L. Paper; Tim O'Brien; Frank Lee; Keith Harris; Ted Bremer; Cámara 16mm [200%]; 500 watios de luz [300%]; Jan Miksovsky; David Campbell; Cámera Boom; Grúa; Pie rodante; Película 16mm [5 100 Pies] | 66h | 962.7 | 962.7 |
| 46 | 2.4.4 | Escena 2 desmontar | 0.5d | 2005-06-17 | 2005-06-17 | 45 | 2005-06-17 | 2005-06-17 | 0.5d | 0d |  |  |  | Jo Brown; Max Benson; Electricista | 12h | 259 | 259 |
| 47 | 2.4.5 | Escena 2-procesos diarios | 1d | 2005-06-17 | 2005-06-18 | 46 | 2005-06-17 | 2005-06-18 | 1d | 0d |  |  | Rodaje nocturno |  |  |  |  |
| 48 | 2.5 | **Escena 5** | 6d | 2005-06-20 | 2005-06-27 | 42 | 2005-06-20 | 2005-06-27 | 6d | 0.5d | 0d |  |  |  | 288h | 4,547.4 | 4,547.4 |
| 49 | 2.5.1 | Escena 5 montaje | 3d | 2005-06-20 | 2005-06-22 |  | 2005-06-20 | 2005-06-22 | 3d | 0.5d | 0d |  |  | Jo Brown; Max Benson | 48h | 1,026 | 1,026 |
| 50 | 2.5.2 | Escena 5 ensayos | 1d | 2005-06-23 | 2005-06-23 | 49 | 2005-06-23 | 2005-06-23 | 1d | 0.5d | 0d |  |  | Scott Cooper; Jo Brown; Eric Miller; David Campbell; Sue Jackson; Daniel Penn; Anne L. Paper; Jan Miksovsky [50%] | 60h | 755 | 755 |
| 51 | 2.5.3 | Escena 5 rodaje | 8h | 2005-06-24 | 2005-06-24 | 50 | 2005-06-24 | 2005-06-24 | 8h | 0.5d | 0d |  |  | Scott Cooper; Jo Brown; Eric Miller; David Campbell; Sue Jackson; Daniel Penn; Anne L. Paper; Tim O'Brien; Frank Lee; Megan Sherman; Doug Hampton [50%]; Keith Harris; Ted Bremer; Cámara 16mm [200%]; 500 watios de luz [200%]; Grúa; Jan Miksovsky; Cámera Boom; Pie rodante; Película 16mm [5 100 Pies] | 164h | 2,424.4 | 2,424.4 |
| 52 | 2.5.4 | Escena 5 desmontar | 1d | 2005-06-27 | 2005-06-27 | 51 | 2005-06-27 | 2005-06-27 | 1d | 0.5d |  |  |  | Jo Brown; Max Benson | 16h | 342 | 342 |
| 53 | 2.5.5 | Escena 5-procesos diarios | 1d | 2005-06-24 | 2005-06-25 | 51 | 2005-06-24 | 2005-06-25 | 1d | 1d |  |  | Rodaje nocturno |  |  |  |  |

Notes:
- 31: Esta escena debe ser rodada después del 24/5 en acceso limitado al sitio.

| ID | WBS | Task | Duration | Start | Finish | Predecessors | Baseline start | Baseline finish | Baseline duration | Total slack | Free slack | Calendar | Resources | Work | Cost | Baseline cost |
| --- | --- | --- | --- | --- | --- | --- | --- | --- | --- | --- | --- | --- | --- | --- | --- | --- |
| 54 | 2.6 | **Escena 6** | 13d | 2005-06-28 | 2005-07-15 | 48 | 2005-06-28 | 2005-07-15 | 13d | 0d |  |  |  | 544h | 8,723.4 | 8,723.4 |
| 55 | 2.6.1 | Escena 6 montaje | 6d | 2005-06-28 | 2005-07-05 |  | 2005-06-28 | 2005-07-05 | 6d | 0.5d | 0d |  | Jo Brown; Max Benson | 96h | 2,052 | 2,052 |
| 56 | 2.6.2 | Escena 6 ensayos | 2d | 2005-07-06 | 2005-07-07 | 55 | 2005-07-06 | 2005-07-07 | 2d | 0.5d | 0d |  | Scott Cooper; Jo Brown; Doug Hampton [50%]; Paul Borm [50%]; David Campbell; Sue Jackson; Anne L. Paper; Jim Hance; Daniel Penn; Jan Miksovsky [50%] | 136h | 1,834.8 | 1,834.8 |
| 57 | 2.6.3 | Escena 6 rodaje | 1.5d | 2005-07-08 | 2005-07-11 | 56 | 2005-07-08 | 2005-07-11 | 1.5d | 0.5d | 0d |  | Scott Cooper; Jo Brown; Doug Hampton [50%]; Paul Borm [50%]; David Campbell; Sue Jackson; Anne L. Paper; Jim Hance; Daniel Penn; Frank Lee; Megan Sherman; Keith Harris; Ted Bremer; Cámara 16mm [300%]; 500 watios de luz [300%]; Pie rodante; Grúa; Joshua Randall; Tim O'Brien; Película 16mm [5 100 Pies] | 264h | 3,810.6 | 3,810.6 |
| 58 | 2.6.4 | Escena 6 desmontar | 3d | 2005-07-11 | 2005-07-14 | 57 | 2005-07-11 | 2005-07-14 | 3d | 0.5d |  |  | Jo Brown; Max Benson | 48h | 1,026 | 1,026 |
| 59 | 2.6.5 | Escena 6-procesos diarios | 1d | 2005-07-14 | 2005-07-15 | 58 | 2005-07-14 | 2005-07-15 | 1d | 0d |  | Rodaje nocturno |  |  |  |  |
| 60 | 2.7 | **Escena 8** | 8d | 2005-07-15 | 2005-07-27 | 54 | 2005-07-15 | 2005-07-27 | 8d | 0d |  |  |  | 320h | 5,278.2 | 5,278.2 |
| 61 | 2.7.1 | Escena 8 montaje | 3d | 2005-07-15 | 2005-07-19 |  | 2005-07-15 | 2005-07-19 | 3d | 0.5d | 0d |  | Jo Brown; Max Benson | 48h | 1,026 | 1,026 |
| 62 | 2.7.2 | Escena 8 ensayos | 2d | 2005-07-20 | 2005-07-21 | 61 | 2005-07-20 | 2005-07-21 | 2d | 0.5d | 0d |  | Scott Cooper; Jo Brown; Doug Hampton [50%]; Paul Borm [50%]; David Campbell; Sue Jackson; Eric Miller; Jan Miksovsky [50%] | 104h | 1,534.8 | 1,534.8 |
| 63 | 2.7.3 | Escena 8 rodaje | 8h | 2005-07-22 | 2005-07-22 | 62 | 2005-07-22 | 2005-07-22 | 8h | 0.5d | 0d |  | Scott Cooper; Jo Brown; Doug Hampton [50%]; Paul Borm [50%]; David Campbell; Sue Jackson; Eric Miller; Tim O'Brien; Frank Lee; Megan Sherman; Keith Harris; Ted Bremer; Cámara 16mm [200%]; 500 watios de luz; Pie rodante [200%]; Cámera Boom; Grúa; Película 16mm [5 100 Pies] | 144h | 2,204.4 | 2,204.4 |
| 64 | 2.7.4 | Escena 8 desmontar | 1.5d | 2005-07-25 | 2005-07-26 | 63 | 2005-07-25 | 2005-07-26 | 1.5d | 0.5d |  |  | Jo Brown; Max Benson | 24h | 513 | 513 |
| 65 | 2.7.5 | Escena 8-procesos diarios | 1d | 2005-07-26 | 2005-07-27 | 64 | 2005-07-26 | 2005-07-27 | 1d | 0d |  | Rodaje nocturno |  |  |  |  |
| 66 | 2.8 | **Escena 4** | 4d | 2005-07-27 | 2005-08-02 | 60 | 2005-07-27 | 2005-08-02 | 4d | 0d |  |  |  | 91h | 1,731.55 | 1,731.55 |
| 67 | 2.8.1 | Escena 4 montaje | 1.5d | 2005-07-27 | 2005-07-28 |  | 2005-07-27 | 2005-07-28 | 1.5d | 0.25d | 0d |  | Jo Brown; Max Benson | 24h | 513 | 513 |
| 68 | 2.8.2 | Escena 4 ensayos | 4h | 2005-07-28 | 2005-07-28 | 67 | 2005-07-28 | 2005-07-28 | 4h | 0.25d | 0d |  | Scott Cooper; Doug Hampton [50%]; Anne L. Paper; Joseph Matthews; Jan Miksovsky [50%] | 16h | 221.2 | 221.2 |
| 69 | 2.8.3 | Escena 4 rodaje | 2h | 2005-07-29 | 2005-07-29 | 68 | 2005-07-29 | 2005-07-29 | 2h | 0.25d | 0d |  | Scott Cooper; Doug Hampton [50%]; Anne L. Paper; Joseph Matthews; Frank Lee; Megan Sherman; Keith Harris; Cámara 16mm [200%]; 500 watios de luz [200%]; Jan Miksovsky; Ted Bremer; Cámera Boom; Película 16mm [5 100 Pies] | 27h | 484.35 | 484.35 |
| 70 | 2.8.4 | Escena 4 desmontar | 1.5d | 2005-07-29 | 2005-08-01 | 69 | 2005-07-29 | 2005-08-01 | 1.5d | 0.25d |  |  | Jo Brown; Max Benson | 24h | 513 | 513 |
| 71 | 2.8.5 | Escena 4-procesos diarios | 1d | 2005-08-01 | 2005-08-02 | 70 | 2005-08-01 | 2005-08-02 | 1d | 0d |  | Rodaje nocturno |  |  |  |  |
| 72 | 3 | **Posproducción** | 100.5d | 2005-08-02 | 2005-12-20 | 23 | 2005-08-02 | 2005-12-20 | 100.5d | 0d |  |  |  | 1726h | 28,467.9 | 28,467.9 |
| 73 | 3.1 | Montaje de película | 8.5d | 2005-08-02 | 2005-08-12 |  | 2005-08-02 | 2005-08-12 | 8.5d | 0d |  |  | Laboratorio Edición; Florian Voss | 136h | 3,221 | 3,221 |
| 74 | 3.2 | Grabación de narración aproximada | 12d | 2005-08-12 | 2005-08-30 | 73 | 2005-08-12 | 2005-08-30 | 12d | 0d |  |  | David Campbell; Michael Patten | 192h | 2,580 | 2,580 |
| 75 | 3.3 | Montaje de la edición impresa | 10d | 2005-08-30 | 2005-09-13 | 74 | 2005-08-30 | 2005-09-13 | 10d | 0d |  |  | Clair Hector; Kim Yoshida; Lisa Garmaise; Richard Lum | 320h | 4,322 | 4,322 |
| 76 | 3.4 | Montaje preliminar | 5d | 2005-09-13 | 2005-09-20 | 75 | 2005-09-13 | 2005-09-20 | 5d | 0d |  |  | Clair Hector; Richard Lum | 80h | 1,425 | 1,425 |
| 77 | 3.5 | Montaje final | 10d | 2005-09-20 | 2005-10-04 | 76 | 2005-09-20 | 2005-10-04 | 10d | 0d |  |  | Clair Hector; Richard Lum; Lisa Garmaise; Kim Yoshida; Laboratorio Edición | 400h | 6,347 | 6,347 |
| 78 | 3.6 | Proyección de la prueba final | 1d | 2005-10-04 | 2005-10-05 | 77 | 2005-10-04 | 2005-10-05 | 1d | 0d |  |  | Clair Hector; Jo Brown; Mark Hassall [50%]; Scott Cooper [50%] | 24h | 482.5 | 482.5 |
| 79 | 3.7 | Grabación de la narración final | 15d | 2005-10-05 | 2005-10-26 | 78 | 2005-10-05 | 2005-10-26 | 15d | 0d |  |  | David Campbell; Michael Patten; Scott Cooper | 216h | 3,330 | 3,330 |
| 80 | 3.8 | Añadir créditos | 1w | 2005-10-26 | 2005-11-02 | 79 | 2005-10-26 | 2005-11-02 | 1w | 0d |  |  | Jo Brown; Michael Patten; Laboratorio Edición | 120h | 2,475 | 2,475 |
| 81 | 3.9 | Añadir música final | 16d | 2005-11-02 | 2005-11-24 | 80 | 2005-11-02 | 2005-11-24 | 16d | 0d |  |  | Michael Patten | 128h | 2,240 | 2,240 |
| 82 | 3.10 | Impresión de internegativos de la película | 3d | 2005-11-24 | 2005-11-29 | 81 | 2005-11-24 | 2005-11-29 | 3d | 0d |  |  | Florian Voss | 24h | 528 | 528 |
| 83 | 3.11 | Reproducción de masters de cinta de audio | 12d | 2005-11-29 | 2005-12-15 | 82 | 2005-11-29 | 2005-12-15 | 12d | 0d |  |  | Doug Hampton [50%] | 48h | 748.8 | 748.8 |
| 84 | 3.12 | Archivar película master y cinta de audio | 2d | 2005-12-15 | 2005-12-19 | 83 | 2005-12-15 | 2005-12-19 | 2d | 0d |  |  | Doug Hampton [50%]; Laboratorio Edición; Michael Patten | 30h | 628.6 | 628.6 |
| 85 | 3.13 | Entrega del master al distribuidor | 1d | 2005-12-19 | 2005-12-20 | 84 | 2005-12-19 | 2005-12-20 | 1d | 0d |  |  | Michael Patten | 8h | 140 | 140 |
