# Cororporate Office Project

Schedule from MS Project, 1998-08-10 to 1998-12-02, status date 1998-10-08, costs in $, A marks actual dates.
Relocation

## Calendars

- Estándar: Mon-Fri 08:00-12:00, 13:00-17:00; Sat-Sun off. Exceptions (off unless hours are given): 1998-09-04 08:00-12:00, 1998-09-07.

## Resources

| Resource | Group | Rate |
| --- | --- | --- |
| auxiliar administrativo | personal oficina | 20 |
| jefe de operaciones | directiva | 25 |
| arquitecto | contratado | 65 |
| empresa de demolición | contratado |  |
| ayudante del jefe de operaciones | personal oficina | 25 |
| sala de conferencias | espacios |  |
| jefe de oficina | directiva | 21.63 |
| vicepresidente | directiva | 36.06 |
| responsable de finanzas | directiva | 38.46 |
| presidente | directiva | 43.27 |
| agente inmobiliario | contratado | 50 |
| electricista | mantenimiento | 50 |
| empresa revestimiento suelo | contratado |  |
| ordenanza | mantenimiento | 18 |
| camión | contratado | 30 |
| técnico informático 2 | técnicos | 26 |
| portero | mantenimiento | 16 |
| técnico informático 1 | técnicos | 30 |
| pintor | mantenimiento | 40 |
| empresa constructora | contratado | 50 |
| carpintero | mantenimiento | 35 |
| servidor | equipamiento |  |

## Schedule

| ID | WBS | Task | Type | Duration | Start | Finish | Predecessors | Complete | Remaining | Baseline start | Baseline finish | Baseline duration | Total slack | Constraint | Resources | Work | Actual work | Cost | Baseline cost | Actual cost |
| --- | --- | --- | --- | --- | --- | --- | --- | --- | --- | --- | --- | --- | --- | --- | --- | --- | --- | --- | --- | --- |
| 1 | 1 | **Reubicación oficinas centrales** |  | 81.38d | 1998-08-10 A | 1998-12-02 |  | 87% | 10.92d | 1998-08-10 | 1998-12-02 | 80.88d | 0d |  |  | 1214.6h | 1091.6h | 51,366.37 | 52,403.61 | 48,166.37 |
| 2 | 1.1 | **Planificación** |  | 32d | 1998-08-10 A | 1998-09-24 A |  | 100% |  | 1998-08-10 | 1998-09-28 | 34d |  |  |  | 655.6h | 655.6h | 28,570.37 | 29,799.61 | 28,570.37 |
| 3 | 1.1.1 | Escribir propuesta |  | 2d | 1998-08-10 A | 1998-08-11 A |  | 100% |  | 1998-08-10 | 1998-08-12 | 3d |  |  | jefe de operaciones; jefe de oficina | 25.6h | 25.6h | 586.15 | 819.23 | 586.15 |
| 4 | 1.1.2 | Contratar arquitecto |  | 2d | 1998-08-12 A | 1998-08-13 A | 3 | 100% |  | 1998-08-13 | 1998-08-14 | 2d |  |  | jefe de oficina; vicepresidente | 32h | 32h | 923.07 | 923.07 | 923.07 |
| 5 | 1.1.3 | Localizar nueva ubicación |  | 1w | 1998-08-14 A | 1998-08-20 A | 4 | 100% |  | 1998-08-17 | 1998-08-21 | 1w |  |  | arquitecto; jefe de oficina; agente inmobiliario | 120h | 120h | 5,465.38 | 5,465.38 | 5,465.38 |
| 6 | 1.1.4 | Presentar propuesta |  | 2d | 1998-08-21 A | 1998-08-24 A | 5 | 100% |  | 1998-08-24 | 1998-08-25 | 2d |  |  | jefe de operaciones; sala de conferencias; arquitecto; presidente; vicepresidente | 80h | 80h | 2,709.23 | 2,709.23 | 2,709.23 |
| 7 | 1.1.5 | Aprobación de la directiva | milestone | 0d | 1998-08-24 A | 1998-08-24 A | 6 | 100% |  | 1998-08-25 | 1998-08-25 | 0d |  |  |  |  |  |  |  |  |
| 8 | 1.1.6 | Negociar nuevo alquiler |  | 3d | 1998-08-25 A | 1998-08-27 A | 7 | 100% |  | 1998-08-26 | 1998-08-31 | 4d |  | finish no later than 1998-09-01 | vicepresidente; responsable de finanzas; agente inmobiliario | 72h | 72h | 2,988.46 | 3,984.62 | 2,988.46 |
| 9 | 1.1.7 | Terminar dibujos |  | 1w | 1998-08-26 A | 1998-09-01 A | 8FS-2d | 100% |  | 1998-08-28 | 1998-09-03 | 1w |  |  | arquitecto [200%] | 80h | 80h | 5,200 | 5,200 | 5,200 |
| 10 | 1.1.8 | Seleccionar subcontratados |  | 1.5w | 1998-09-02 A | 1998-09-14 A | 9 | 100% |  | 1998-09-04 | 1998-09-16 | 1.5w |  |  | arquitecto; jefe de operaciones; jefe de oficina | 160h | 160h | 6,198.08 | 6,198.08 | 6,198.08 |
| 11 | 1.1.9 | Contratar empresa de mudanzas |  | 4d | 1998-09-09 A | 1998-09-14 A | 10FF | 100% |  | 1998-09-11 | 1998-09-16 | 4d |  |  | jefe de operaciones [75%] | 16h | 16h | 400 | 400 | 400 |
| 12 | 1.1.10 | Enviar dibujos |  | 1.5w | 1998-09-15 A | 1998-09-24 A | 11 | 100% |  | 1998-09-17 | 1998-09-28 | 1.5w |  |  | arquitecto; auxiliar administrativo [50%] | 70h | 70h | 4,100 | 4,100 | 4,100 |
| 13 | 1.1.11 | Permisos recibidos | milestone | 0d | 1998-09-24 A | 1998-09-24 A | 12 | 100% |  | 1998-09-28 | 1998-09-28 | 0d |  |  |  |  |  |  |  |  |
| 14 | 1.2 | **Remodelación** |  | 41.33d | 1998-09-24 A | 1998-11-20 A | 2 | 100% |  | 1998-09-28 | 1998-11-20 | 39.5d |  |  |  | 408h | 408h | 19,116 | 19,116 | 19,116 |
| 15 | 1.2.1 | Demolición del espacio existente |  | 3d | 1998-09-24 A | 1998-09-29 A |  | 100% |  | 1998-09-28 | 1998-10-01 | 3d |  | start no earlier than 1998-09-21 | empresa de demolición | 24h | 24h | 4,000 | 4,000 | 4,000 |
| 16 | 1.2.2 | Levantar tabiques |  | 3.33d | 1998-09-29 A | 1998-10-02 A | 15 | 100% |  | 1998-10-01 | 1998-10-06 | 3.5d |  |  | empresa constructora [150%] | 32h | 32h | 1,600 | 1,600 | 1,600 |
| 17 | 1.2.3 | Instalación eléctrica |  | 6d | 1998-10-02 A | 1998-10-14 A | 16 | 100% |  | 1998-10-07 | 1998-10-14 | 6d |  |  | electricista | 48h | 48h | 2,400 | 2,400 | 2,400 |
| 18 | 1.2.4 | Instalación de líneas de voz y datos |  | 3d | 1998-10-15 A | 1998-10-20 A | 17FS+1d | 100% |  | 1998-10-16 | 1998-10-20 | 3d |  |  | electricista | 24h | 24h | 1,200 | 1,200 | 1,200 |
| 19 | 1.2.5 | Terminar paredes |  | 1w | 1998-10-20 A | 1998-10-27 A | 18 | 100% |  | 1998-10-21 | 1998-10-27 | 1w |  |  | pintor; empresa constructora | 80h | 80h | 4,200 | 4,200 | 4,200 |
| 20 | 1.2.6 | Instalar puertas y ventanas |  | 3d | 1998-10-23 A | 1998-10-28 A | 19FS-2d | 100% |  | 1998-10-26 | 1998-10-28 | 3d |  |  | carpintero | 24h | 24h | 840 | 840 | 840 |
| 21 | 1.2.7 | Pintar |  | 4d | 1998-10-28 A | 1998-11-03 A | 20 | 100% |  | 1998-10-29 | 1998-11-03 | 4d |  |  | pintor | 32h | 32h | 1,280 | 1,280 | 1,280 |
| 22 | 1.2.8 | Colocar moqueta: oficinas |  | 3d | 1998-11-03 A | 1998-11-06 A | 21 | 100% |  | 1998-11-04 | 1998-11-06 | 3d |  |  | empresa revestimiento suelo | 24h | 24h |  |  |  |
| 23 | 1.2.9 | Colocar linóleo: sala del servidor |  | 3d | 1998-11-03 A | 1998-11-06 A | 22SS | 100% |  | 1998-11-04 | 1998-11-06 | 3d |  |  | empresa revestimiento suelo | 24h | 24h |  |  |  |
| 24 | 1.2.10 | Ultimas reparaciones |  | 1w | 1998-11-06 A | 1998-11-13 A | 23, 22 | 100% |  | 1998-11-09 | 1998-11-13 | 1w |  |  | carpintero [50%]; electricista [50%] | 40h | 40h | 1,700 | 1,700 | 1,700 |
| 25 | 1.2.11 | Probar sistemas |  | 2d | 1998-11-13 A | 1998-11-17 A | 24 | 100% |  | 1998-11-16 | 1998-11-17 | 2d |  |  | electricista | 16h | 16h | 800 | 800 | 800 |
| 26 | 1.2.12 | Revisión de acabado |  | 3d | 1998-11-13 A | 1998-11-18 A | 24, 25FF | 100% |  | 1998-11-16 | 1998-11-18 | 3d |  |  | carpintero | 24h | 24h | 840 | 840 | 840 |
| 27 | 1.2.13 | Limpieza final |  | 2d | 1998-11-18 A | 1998-11-20 A | 26 | 100% |  | 1998-11-18 | 1998-11-20 | 2d |  |  | portero | 16h | 16h | 256 | 256 | 256 |
| 28 | 1.2.14 | Remodelación terminada | milestone | 0d | 1998-11-20 A | 1998-11-20 A | 27 | 100% |  | 1998-11-20 | 1998-11-20 | 0d |  |  |  |  |  |  |  |  |

| ID | WBS | Task | Type | Duration | Start | Finish | Predecessors | Complete | Remaining | Baseline start | Baseline finish | Baseline duration | Total slack | Free slack | Resources | Work | Actual work | Cost | Baseline cost | Actual cost |
| --- | --- | --- | --- | --- | --- | --- | --- | --- | --- | --- | --- | --- | --- | --- | --- | --- | --- | --- | --- | --- |
| 29 | 1.3 | **Traslado** |  | 10.04d | 1998-11-18 A | 1998-12-02 | 27SS | 18% | 8.2d | 1998-11-19 | 1998-12-02 | 9.38d | 0d |  |  | 151h | 28h | 3,680 | 3,488 | 480 |
| 30 | 1.3.1 | **Oficinas** |  | 7.17d | 1998-11-18 A | 1998-11-27 |  | 28% | 5.18d | 1998-11-19 | 1998-11-26 | 6d | 2.88d |  |  | 80h | 24h | 1,904 | 1,712 | 480 |
| 31 | 1.3.1.1 | Desconectar computadoras/equipos |  | 2d | 1998-11-18 A | 1998-11-20 |  | 50% | 1d | 1998-11-19 | 1998-11-20 | 2d | 0.7d | 0d | técnico informático 1 | 16h | 8h | 528 | 528 | 264 |
| 32 | 1.3.1.2 | Desmontar mobiliario |  | 2d | 1998-11-23 A | 1998-11-24 | 31FS-1d | 50% | 1d | 1998-11-20 | 1998-11-23 | 2d | 2.38d | 0d | ordenanza | 16h | 8h | 288 | 288 | 144 |
| 33 | 1.3.1.3 | Trasladar mobiliario/equipo/cajas |  | 8h | 1998-11-24 A | 1998-11-25 | 32 | 50% | 4h | 1998-11-24 | 1998-11-24 | 4h | 2.38d | 0d | ordenanza; camión | 16h | 8h | 384 | 192 | 72 |
| 34 | 1.3.1.4 | Montar mobiliario |  | 2d | 1998-11-25 | 1998-11-27 | 33 |  |  | 1998-11-24 | 1998-11-26 | 2d | 2.38d | 0d | ordenanza | 16h |  | 288 | 288 |  |
| 35 | 1.3.1.5 | Conectar computadoras/equipos |  | 2d | 1998-11-26 | 1998-11-27 | 34FS-1d |  |  | 1998-11-25 | 1998-11-26 | 2d | 2.12d | 0d | técnico informático 2 | 16h |  | 416 | 416 |  |
| 36 | 1.3.1.6 | Oficinas terminadas | milestone | 0d | 1998-11-27 | 1998-11-27 | 35 |  |  | 1998-11-26 | 1998-11-26 | 0d | 2.88d |  |  |  |  |  |  |  |
| 37 | 1.3.2 | **Sala del servidor** |  | 7.88d | 1998-11-23 A | 1998-12-02 | 31 | 7% | 7.34d | 1998-11-23 | 1998-12-02 | 7.38d | 0d |  |  | 71h | 4h | 1,776 | 1,776 |  |
| 38 | 1.3.2.1 | Hacer copia de seguridad del servidor |  | 15h | 1998-11-23 A | 1998-11-25 |  | 27% | 11h | 1998-11-23 | 1998-11-24 | 15h | 0d |  | servidor | 15h | 4h |  |  |  |
| 39 | 1.3.2.2 | Desconectar servidor |  | 2d | 1998-11-25 | 1998-11-27 | 38 |  |  | 1998-11-24 | 1998-11-26 | 2d | 0d |  | técnico informático 1 | 16h |  | 528 | 528 |  |
| 40 | 1.3.2.3 | Trasladar servidor |  | 4h | 1998-11-27 | 1998-11-27 | 39 |  |  | 1998-11-26 | 1998-11-27 | 4h | 0d |  | ordenanza; camión | 8h |  | 192 | 192 |  |
| 41 | 1.3.2.4 | Conectar servidor |  | 2d | 1998-11-27 | 1998-12-01 | 40 |  |  | 1998-11-27 | 1998-12-01 | 2d | 0d |  | técnico informático 1 | 16h |  | 528 | 528 |  |
| 42 | 1.3.2.5 | Probar servidor |  | 1d | 1998-12-01 | 1998-12-02 | 41 |  |  | 1998-12-01 | 1998-12-02 | 1d | 0d |  | técnico informático 1 [200%] | 16h |  | 528 | 528 |  |
| 43 | 1.3.2.6 | Sala del servidor terminada | milestone | 0d | 1998-12-02 | 1998-12-02 | 42 |  |  | 1998-12-02 | 1998-12-02 | 0d | 0d |  |  |  |  |  |  |  |
| 44 | 1.4 | Traslado terminado | milestone | 0d | 1998-12-02 | 1998-12-02 | 29, 36 |  |  | 1998-12-02 | 1998-12-02 | 0d | 0d |  |  |  |  |  |  |  |

Notes:
- 38: El progreso de la tarea se detuvo al producirse un error en la copia de seguridad. La tarea será finalizada tras el fin de semana.
