Schedule from MS Project, 2009-06-02 to 2009-08-25, costs in €.

## Calendars

- Estándar: Mon-Fri 09:00-13:00, 15:00-19:00; Sat-Sun off. Exceptions (off unless hours are given): 2009-07-25 09:00-13:00, 15:00-19:00.

## Resources

| Resource | Rate |
| --- | --- |
| Novio |  |
| Novia |  |
| Organizador | 35 |
| Traje novio | 700 |
| Traje novia | 1000 |
| Alianzas | 300 |
| Peluquería/Maquillaje | 180 |
| Reportaje fotográfico | 25 |
| Album fotográfico | 1200 |
| Música ceremonia | 180 |
| Música banquete | 50 |
| Alquiler vehículo novios | 300 |
| Alquiler vehículo invitados | 50 |
| Ceremonia | 30 |
| Licencia ayuntamiento | 30 |
| Flores elegidas | 200 |
| Ramo novia | 50 |
| Instalación decoración floral | 30 |
| Servicio limpieza | 20 |
| Alquiler recinto | 200 |
| Alquiler carpa | 1000 |
| Montaje carpa | 60 |
| Menu elegido | 90 |
| Servicio Catering | 30 |
| Reserva hotel | 400 |
| Invitaciones boda | 120 |
| Envio Invitaciones | 50 |
| Regalos madrina | 150 |
| Regalos padrino | 150 |

## Schedule

| ID | WBS | Task | Type | Duration | Start | Finish | Predecessors | Baseline start | Baseline finish | Baseline duration | Total slack | Free slack | Constraint | Deadline | Resources | Work | Cost | Baseline cost |
| --- | --- | --- | --- | --- | --- | --- | --- | --- | --- | --- | --- | --- | --- | --- | --- | --- | --- | --- |
| 1 | 1 | **Vestuario** |  | 33.88d | 2009-06-02 10:00 | 2009-07-17 19:00 |  | 2009-06-02 10:00 | 2009-07-17 19:00 | 33.88d | 15.75d |  |  |  |  | 21h | 1,770 | 1,770 |
| 2 | 1.1 | **Vestuario del novio** |  | 13.38d | 2009-06-02 16:00 | 2009-06-20 10:00 |  | 2009-06-02 16:00 | 2009-06-20 10:00 | 13.38d | 18.25d |  |  |  |  | 10h | 35 | 35 |
| 3 | 1.1.1 | Concertar cita previa |  | 1h | 2009-06-02 16:00 | 2009-06-02 17:00 |  | 2009-06-02 16:00 | 2009-06-02 17:00 | 1h | 18.25d | 0.12d |  |  | Organizador | 1h | 35 | 35 |
| 4 | 1.1.2 | Selección de posibilidades |  | 3h | 2009-06-08 19:00 | 2009-06-09 19:00 | 3 | 2009-06-08 19:00 | 2009-06-09 19:00 | 3h | 19d | 0d |  |  | Novio | 3h |  |  |
| 5 | 1.1.3 | Elección traje definitivo |  | 3h | 2009-06-09 19:00 | 2009-06-10 19:00 | 4 | 2009-06-09 19:00 | 2009-06-10 19:00 | 3h | 19d | 0d |  |  | Novio | 3h |  |  |
| 6 | 1.1.4 | Selección de complementos |  | 1h | 2009-06-10 19:00 | 2009-06-10 20:00 | 5 | 2009-06-10 19:00 | 2009-06-10 20:00 | 1h | 19d | 0d |  |  | Novio | 1h |  |  |
| 7 | 1.1.5 | Elección definitiva de complementos |  | 1h | 2009-06-10 20:00 | 2009-06-10 21:00 | 6 | 2009-06-10 20:00 | 2009-06-10 21:00 | 1h | 19d | 0d |  |  | Novio | 1h |  |  |
| 8 | 1.1.6 | Firma de contrato modista | milestone | 0d | 2009-06-10 21:00 | 2009-06-10 21:00 | 7 | 2009-06-10 21:00 | 2009-06-10 21:00 | 0d | 19d | 0d |  |  | Organizador |  |  |  |
| 9 | 1.1.7 | Realización de arreglos |  | 7d | 2009-06-11 09:00 | 2009-06-19 19:00 | 8 | 2009-06-11 09:00 | 2009-06-19 19:00 | 7d | 19d | 0d |  |  |  |  |  |  |
| 10 | 1.1.8 | Prueba de arreglos |  | 1h | 2009-06-20 09:00 | 2009-06-20 10:00 | 9 | 2009-06-20 09:00 | 2009-06-20 10:00 | 1h | 19.88d | 0d |  |  | Novio | 1h |  |  |
| 11 | 1.1.9 | Entrega del traje | milestone | 0d | 2009-06-20 10:00 | 2009-06-20 10:00 | 10 | 2009-06-20 10:00 | 2009-06-20 10:00 | 0d | 20d | 19d |  | 2009-07-17 19:00 | Novio; Organizador; Traje novio |  |  |  |
| 12 | 1.2 | **Vestuario de la novia** |  | 17.88d | 2009-06-02 10:00 | 2009-06-25 20:00 |  | 2009-06-02 10:00 | 2009-06-25 20:00 | 17.88d | 15.75d |  |  |  |  | 11h | 35 | 35 |
| 13 | 1.2.1 | Concertar cita previa |  | 1h | 2009-06-02 10:00 | 2009-06-02 11:00 |  | 2009-06-02 10:00 | 2009-06-02 11:00 | 1h | 15.75d | 0.62d |  |  | Organizador | 1h | 35 | 35 |
| 14 | 1.2.2 | Selección de posibilidades |  | 4h | 2009-06-08 19:00 | 2009-06-09 20:00 | 13 | 2009-06-08 19:00 | 2009-06-09 20:00 | 4h | 15d | 0d |  |  | Novia | 4h |  |  |
| 15 | 1.2.3 | Elección traje definitivo |  | 3h | 2009-06-09 20:00 | 2009-06-10 20:00 | 14 | 2009-06-09 20:00 | 2009-06-10 20:00 | 3h | 15d | 0d |  |  | Novia | 3h |  |  |
| 16 | 1.2.4 | Selección de complementos |  | 1h | 2009-06-10 20:00 | 2009-06-10 21:00 | 15 | 2009-06-10 20:00 | 2009-06-10 21:00 | 1h | 15.88d | 0.88d |  |  | Novia | 1h |  |  |
| 17 | 1.2.5 | Elección definitiva de complementos |  | 1h | 2009-06-11 19:00 | 2009-06-11 20:00 | 16 | 2009-06-11 19:00 | 2009-06-11 20:00 | 1h | 15d | 0d |  |  | Novia | 1h |  |  |
| 18 | 1.2.6 | Firma de contrato modista | milestone | 0d | 2009-06-11 20:00 | 2009-06-11 20:00 | 17 | 2009-06-11 20:00 | 2009-06-11 20:00 | 0d | 15.88d | 0d |  |  | Organizador |  |  |  |
| 19 | 1.2.7 | Realización de arreglos |  | 10d | 2009-06-12 09:00 | 2009-06-25 19:00 | 18 | 2009-06-12 09:00 | 2009-06-25 19:00 | 10d | 15.88d | 0d |  |  |  |  |  |  |
| 20 | 1.2.8 | Prueba de arregos |  | 1h | 2009-06-25 19:00 | 2009-06-25 20:00 | 19 | 2009-06-25 19:00 | 2009-06-25 20:00 | 1h | 15.88d | 0d |  |  | Novia | 1h |  |  |
| 21 | 1.2.9 | Entrega del traje | milestone | 0d | 2009-06-25 20:00 | 2009-06-25 20:00 | 20 | 2009-06-25 20:00 | 2009-06-25 20:00 | 0d | 16d | 15d |  | 2009-07-17 19:00 | Novia; Organizador; Traje novia |  |  |  |
| 22 | 1.3 | Pago y cierre de vestuario | milestone | 0d | 2009-07-17 09:00 | 2009-07-17 19:00 | 11, 21 | 2009-07-17 09:00 | 2009-07-17 19:00 | 0d | 28d |  | start no earlier than 2009-07-17 09:00 |  | Organizador; Traje novia; Traje novio |  | 1,700 | 1,700 |
| 23 | 2 | **Anillos** |  | 33.25d | 2009-06-02 17:00 | 2009-07-17 19:00 |  | 2009-06-02 17:00 | 2009-07-17 19:00 | 33.25d | 4.12d |  |  |  |  | 9h | 335 | 335 |
| 24 | 2.1 | Concertar cita previa |  | 1h | 2009-06-02 17:00 | 2009-06-02 18:00 |  | 2009-06-02 17:00 | 2009-06-02 18:00 | 1h | 4.12d | 0d |  |  | Organizador | 1h | 35 | 35 |
| 25 | 2.2 | Selección de posiblidades |  | 3h | 2009-06-11 19:00 | 2009-06-12 19:00 | 24 | 2009-06-11 19:00 | 2009-06-12 19:00 | 3h | 4d | 0d |  |  | Novia; Novio | 4h |  |  |
| 26 | 2.3 | Elección modelo definitivo |  | 2h | 2009-06-12 19:00 | 2009-06-18 20:00 | 25 | 2009-06-12 19:00 | 2009-06-18 20:00 | 2h | 4d | 0d |  |  | Novio; Novia | 2h |  |  |
| 27 | 2.4 | Firma de contrato joyería | milestone | 0d | 2009-06-18 20:00 | 2009-06-18 20:00 | 26 | 2009-06-18 20:00 | 2009-06-18 20:00 | 0d | 4d | 0d |  |  | Organizador |  |  |  |
| 28 | 2.5 | Arreglos y grabados |  | 7d | 2009-06-19 09:00 | 2009-06-29 19:00 | 27 | 2009-06-19 09:00 | 2009-06-29 19:00 | 7d | 4d | 0d |  |  |  |  |  |  |
| 29 | 2.6 | Prueba de arregos |  | 2h | 2009-06-29 19:00 | 2009-07-10 21:00 | 28 | 2009-06-29 19:00 | 2009-07-10 21:00 | 2h | 4d | 0d |  |  | Novio; Novia; Alianzas | 2h |  |  |
| 30 | 2.7 | Entrega de alianzas | milestone | 0d | 2009-07-10 21:00 | 2009-07-10 21:00 | 29 | 2009-07-10 21:00 | 2009-07-10 21:00 | 0d | 5d | 4d |  | 2009-07-17 19:00 | Novia; Novio; Alianzas |  |  |  |
| 31 | 2.8 | Pago y Cierre contrato alianzas | milestone | 0d | 2009-07-17 09:00 | 2009-07-17 19:00 | 30 | 2009-07-17 09:00 | 2009-07-17 19:00 | 0d | 28d |  | start no earlier than 2009-07-17 09:00 |  | Organizador; Alianzas |  | 300 | 300 |

| ID | WBS | Task | Type | Duration | Start | Finish | Predecessors | Baseline start | Baseline finish | Baseline duration | Total slack | Free slack | Constraint | Resources | Work | Cost | Baseline cost |
| --- | --- | --- | --- | --- | --- | --- | --- | --- | --- | --- | --- | --- | --- | --- | --- | --- | --- |
| 32 | 3 | **Peinado y maquillaje** |  | 15.12d | 2009-07-10 18:00 | 2009-07-29 19:20 |  | 2009-07-10 18:00 | 2009-07-29 19:20 | 14.12d | 18d |  |  |  | 11h | 395 | 395 |
| 33 | 3.1 | Concertar cita previa |  | 1h | 2009-07-10 18:00 | 2009-07-10 19:00 |  | 2009-07-10 18:00 | 2009-07-10 19:00 | 1h | 20d | 0d |  | Organizador | 1h | 35 | 35 |
| 34 | 3.2 | Selección de posiblidades |  | 1h | 2009-07-11 09:00 | 2009-07-11 10:00 | 33 | 2009-07-11 09:00 | 2009-07-11 10:00 | 1h | 21d | 0d |  | Novia | 1h |  |  |
| 35 | 3.3 | Prueba de posiblidades |  | 4h | 2009-07-22 20:00 | 2009-07-23 21:00 | 34 | 2009-07-22 20:00 | 2009-07-23 21:00 | 4h | 19.88d | 0.88d |  | Novia | 4h |  |  |
| 36 | 3.4 | Selección de peinado definitivo |  | 1h | 2009-07-24 19:00 | 2009-07-24 20:00 | 35 | 2009-07-24 19:00 | 2009-07-24 20:00 | 1h | 19d | 0d |  | Novia | 1h |  |  |
| 37 | 3.5 | Firma de contrato peinado | milestone | 0d | 2009-07-24 20:00 | 2009-07-24 20:00 | 36 | 2009-07-24 20:00 | 2009-07-24 20:00 | 0d | 19d | 0d |  | Organizador |  |  |  |
| 38 | 3.6 | Servicio pel/maq fotos estudio |  | 2h | 2009-07-25 09:00 | 2009-07-25 11:00 | 37 | 2009-07-25 09:00 | 2009-07-25 11:00 | 2h | 19.75d | 0d |  | Peluquería/Maquillaje; Novia | 2h | 180 | 180 |
| 39 | 3.7 | Servicio de peluquería/maquillaje |  | 2h | 2009-07-28 20:20 | 2009-07-29 19:20 | 38 | 2009-07-28 20:20 | 2009-07-29 19:20 | 2h | 18d | 0d | start no earlier than 2009-07-25 09:00 | Peluquería/Maquillaje; Novia | 2h | 180 | 180 |
| 40 | 3.8 | Servicio pel.maq. Concluidos | milestone | 0d | 2009-07-28 20:20 | 2009-07-28 20:20 | 39SS |  |  |  | 19d | 0d | start no earlier than 2009-07-28 09:00 |  |  |  |  |
| 41 | 3.9 | Pago y Cierre contrato peluquería/maq | milestone | 0d | 2009-07-29 09:00 | 2009-07-29 09:00 | 40 | 2009-07-29 19:20 | 2009-07-29 19:20 | 0d | 19d |  | start no earlier than 2009-07-29 09:00 | Organizador; Peluquería/Maquillaje |  |  |  |
| 42 | 4 | **Fotografía** |  | 26.88d | 2009-07-13 10:00 | 2009-08-15 10:00 |  | 2009-07-13 10:00 | 2009-08-15 10:00 | 25.88d | 6d |  |  |  | 25h | 1,368.33 | 1,368.33 |
| 43 | 4.1 | Concertar cita previa |  | 1h | 2009-07-13 10:00 | 2009-07-13 11:00 |  | 2009-07-13 10:00 | 2009-07-13 11:00 | 1h | 24.75d | 0.62d |  | Organizador | 1h | 35 | 35 |
| 44 | 4.2 | Selección de album |  | 2h | 2009-07-21 19:00 | 2009-07-21 21:00 | 43 | 2009-07-21 19:00 | 2009-07-21 21:00 | 2h | 23d | 0d |  | Novio; Novia | 2h |  |  |
| 45 | 4.3 | Firma contrato fotógrafo | milestone | 0d | 2009-07-21 21:00 | 2009-07-21 21:00 | 44 | 2009-07-21 21:00 | 2009-07-21 21:00 | 0d | 24d | 3d |  | Organizador |  |  |  |
| 46 | 4.4 | Realización fotos estudio |  | 4h | 2009-07-25 11:00 | 2009-07-28 20:20 | 45, 21, 11, 38 | 2009-07-25 11:00 | 2009-07-28 20:20 | 4h | 19d | 13d |  | Novio; Novia | 4h |  |  |
| 47 | 4.5 | Realización reportaje fotográfico |  | 8.67h | 2009-07-25 09:00 | 2009-07-28 18:20 | 45 | 2009-07-25 09:00 | 2009-07-28 18:20 | 8.67h | 19.08d | 13.08d | start no earlier than 2009-07-25 09:00 | Novio; Novia; Reportaje fotográfico | 16h | 133.33 | 133.33 |
| 48 | 4.6 | Entrega reportaje completo |  | 1h | 2009-08-15 09:00 | 2009-08-15 10:00 | 47, 46 | 2009-08-15 09:00 | 2009-08-15 10:00 | 1h | 6d | 0d | start no earlier than 2009-08-15 09:00 | Novio; Novia; Album fotográfico | 2h | 1,200 | 1,200 |
| 49 | 4.7 | Reportaje completado | milestone | 0d | 2009-08-15 10:00 | 2009-08-15 10:00 | 48 |  |  |  | 6d | 0d |  |  |  |  |  |
| 50 | 4.8 | Pago y Cierre contrato fotógrafo | milestone | 0d | 2009-08-15 10:00 | 2009-08-15 10:00 | 49 | 2009-08-15 10:00 | 2009-08-15 10:00 | 0d | 6d |  |  | Organizador; Album fotográfico; Reportaje fotográfico |  |  |  |
| 51 | 5 | **Flores y decoración** |  | 12.75d | 2009-07-13 11:00 | 2009-07-28 09:00 |  | 2009-07-13 11:00 | 2009-07-28 09:00 | 11.75d | 20d |  |  |  | 9.08h | 37.4 | 37.4 |
| 52 | 5.1 | Concertar cita previa |  | 1h | 2009-07-13 11:00 | 2009-07-13 12:00 |  | 2009-07-13 11:00 | 2009-07-13 12:00 | 1h | 24.25d | 0.5d |  | Organizador | 1h | 35 | 35 |
| 53 | 5.2 | Selección del tipo de decoración |  | 3h | 2009-07-21 20:00 | 2009-07-22 20:00 | 52 | 2009-07-21 20:00 | 2009-07-22 20:00 | 3h | 22d | 0d |  | Novio; Novia | 4h |  |  |
| 54 | 5.3 | Selección tipo plantas |  | 2h | 2009-07-22 20:00 | 2009-07-24 19:00 | 53 | 2009-07-22 20:00 | 2009-07-24 19:00 | 2h | 21d | 0d |  | Novio; Novia | 2h |  |  |
| 55 | 5.4 | Selección ramo novia |  | 2h | 2009-07-24 19:00 | 2009-07-24 21:00 | 54 | 2009-07-24 19:00 | 2009-07-24 21:00 | 2h | 21d | 0d |  | Novio; Novia | 2h |  |  |
| 56 | 5.5 | Firma contrato floristería | milestone | 0d | 2009-07-24 21:00 | 2009-07-24 21:00 | 55 | 2009-07-24 21:00 | 2009-07-24 21:00 | 0d | 21d | 0d |  | Novio; Novia |  |  |  |
| 57 | 5.6 | Instalación decoración iglesia |  | 8h | 2009-07-25 09:00 | 2009-07-25 19:00 | 56, 129 | 2009-07-25 09:00 | 2009-07-25 19:00 | 8h | 21d | 0d | start no earlier than 2009-07-25 09:00 | Instalación decoración floral [1%] | 0.08h | 2.4 | 2.4 |
| 58 | 5.7 | Decoración instalada | milestone | 0d | 2009-07-25 09:00 | 2009-07-25 09:00 | 57SS |  |  |  | 22d | 0d | start no earlier than 2009-07-25 09:00 |  |  |  |  |
| 59 | 5.8 | Entrega ramo novia | milestone | 0d | 2009-07-25 09:00 | 2009-07-25 09:00 | 56, 58 | 2009-07-25 09:00 | 2009-07-25 09:00 | 0d | 22d | 2d | start no earlier than 2009-07-25 09:00 | Ramo novia; Novia |  |  |  |
| 60 | 5.9 | Pago y Cierre contrato floristería | milestone | 0d | 2009-07-28 09:00 | 2009-07-28 09:00 | 59, 57 | 2009-07-28 09:00 | 2009-07-28 09:00 | 0d | 20d |  | start no earlier than 2009-07-28 09:00 | Organizador; Flores elegidas |  |  |  |

| ID | WBS | Task | Type | Duration | Start | Finish | Predecessors | Baseline start | Baseline finish | Baseline duration | Total slack | Free slack | Constraint | Deadline | Resources | Work | Cost | Baseline cost |
| --- | --- | --- | --- | --- | --- | --- | --- | --- | --- | --- | --- | --- | --- | --- | --- | --- | --- | --- |
| 61 | 6 | **Papelería y regalos** |  | 41d | 2009-06-02 19:00 | 2009-07-28 09:00 |  | 2009-06-02 19:00 | 2009-07-28 09:00 | 40d | 1.88d |  |  |  |  | 153h | 4,495 | 4,495 |
| 62 | 6.1 | **Invitaciones** |  | 12d | 2009-06-02 19:00 | 2009-06-18 19:00 |  | 2009-06-02 19:00 | 2009-06-18 19:00 | 12d | 1.88d |  |  |  |  | 35h | 205 | 205 |
| 63 | 6.1.1 | Elaboración lista invitados |  | 2d | 2009-06-02 19:00 | 2009-06-08 19:00 |  | 2009-06-02 19:00 | 2009-06-08 19:00 | 2d | 1d | 0d |  |  | Novio; Novia | 32h |  |  |
| 64 | 6.1.2 | Elaboración lista bodas |  | 2d | 2009-06-09 09:00 | 2009-06-10 19:00 | 63 | 2009-06-09 09:00 | 2009-06-10 19:00 | 2d | 1.62d | 0d |  |  |  |  |  |  |
| 65 | 6.1.3 | Concertar cita previa |  | 1h | 2009-06-11 09:00 | 2009-06-11 10:00 | 64 | 2009-06-11 09:00 | 2009-06-11 10:00 | 1h | 1.62d | 0d |  |  | Organizador | 1h | 35 | 35 |
| 66 | 6.1.4 | Selección tipo invitación |  | 2h | 2009-06-11 10:00 | 2009-06-11 12:00 | 65 | 2009-06-11 10:00 | 2009-06-11 12:00 | 2h | 1.62d | 0.5d |  |  |  |  |  |  |
| 67 | 6.1.5 | Selección texto invitación |  | 1h | 2009-06-11 18:00 | 2009-06-11 19:00 | 66 | 2009-06-11 18:00 | 2009-06-11 19:00 | 1h | 1d | 0d |  |  | Novio; Novia | 2h |  |  |
| 68 | 6.1.6 | Firma contrato papelería | milestone | 0d | 2009-06-11 19:00 | 2009-06-11 19:00 | 67 | 2009-06-11 19:00 | 2009-06-11 19:00 | 0d | 1d | 0d |  |  | Organizador |  |  |  |
| 69 | 6.1.7 | Envío invitaciones |  | 5d | 2009-06-12 09:00 | 2009-06-18 19:00 | 68 | 2009-06-12 09:00 | 2009-06-18 19:00 | 5d | 1d | 0d |  | 2009-06-19 19:00 | Invitaciones boda; Envio Invitaciones |  | 170 | 170 |
| 70 | 6.1.8 | Invitaciones entregadas | milestone | 0d | 2009-06-12 09:00 | 2009-06-12 09:00 | 69SS |  |  |  | 54d |  | start no earlier than 2009-06-12 09:00 |  |  |  |  |  |
| 71 | 6.2 | **Regalo madrina** |  | 20.62d | 2009-06-03 09:00 | 2009-07-01 16:00 |  | 2009-06-03 09:00 | 2009-07-01 16:00 | 20.62d | 18.75d |  |  |  |  | 59h | 2,145 | 2,145 |
| 72 | 6.2.1 | Concertar cita previa |  | 1h | 2009-06-03 09:00 | 2009-06-03 10:00 |  | 2009-06-03 09:00 | 2009-06-03 10:00 | 1h | 18.75d | 0.75d |  |  | Organizador | 1h | 35 | 35 |
| 73 | 6.2.2 | Selección regalo |  | 2h | 2009-06-19 19:00 | 2009-06-19 21:00 | 72 | 2009-06-19 19:00 | 2009-06-19 21:00 | 2h | 18d | 0d |  |  | Novio; Novia | 2h |  |  |
| 74 | 6.2.3 | Firma contrato regalos madrina | milestone | 0d | 2009-06-19 21:00 | 2009-06-19 21:00 | 73 | 2009-06-19 21:00 | 2009-06-19 21:00 | 0d | 18.5d | 0d |  |  | Organizador |  |  |  |
| 75 | 6.2.4 | Entrega regalos madrina |  | 7d | 2009-06-22 12:00 | 2009-07-01 16:00 | 74 | 2009-06-22 12:00 | 2009-07-01 16:00 | 7d | 18.38d | 0d |  | 2009-07-24 19:00 | Organizador; Regalos madrina | 56h | 2,110 | 2,110 |
| 76 | 6.2.5 | Regalos entregados | milestone | 0d | 2009-07-01 16:00 | 2009-07-01 16:00 | 75 |  |  |  | 40.38d |  | start no earlier than 2009-06-22 09:00 |  |  |  |  |  |
| 77 | 6.3 | **Regalo padrino** |  | 27.62d | 2009-06-03 10:00 | 2009-07-10 17:00 |  | 2009-06-03 10:00 | 2009-07-10 17:00 | 27.62d | 12.75d |  |  |  |  | 59h | 2,145 | 2,145 |
| 78 | 6.3.1 | Concertar cita previa |  | 1h | 2009-06-03 10:00 | 2009-06-03 11:00 |  | 2009-06-03 10:00 | 2009-06-03 11:00 | 1h | 12.75d | 0.62d |  |  | Organizador | 1h | 35 | 35 |
| 79 | 6.3.2 | Selección regalo |  | 2h | 2009-06-19 20:00 | 2009-06-20 10:00 | 78 | 2009-06-19 20:00 | 2009-06-20 10:00 | 2h | 11d | 0d |  |  | Novio; Novia | 2h |  |  |
| 80 | 6.3.3 | Firma contrato regalo padrino | milestone | 0d | 2009-06-20 10:00 | 2009-06-20 10:00 | 79 | 2009-06-20 10:00 | 2009-06-20 10:00 | 0d | 11.25d | 0d |  |  | Organizador |  |  |  |
| 81 | 6.3.4 | Entrega regalos padrino |  | 7d | 2009-07-01 16:00 | 2009-07-10 17:00 | 80 | 2009-07-01 16:00 | 2009-07-10 17:00 | 7d | 11.25d | 0d |  | 2009-07-24 19:00 | Organizador; Regalos padrino | 56h | 2,110 | 2,110 |
| 82 | 6.3.5 | Regalos entregados | milestone | 0d | 2009-07-10 17:00 | 2009-07-10 17:00 | 81 |  |  |  | 33.25d |  |  |  |  |  |  |  |
| 83 | 6.4 | Pago y Cierre contrato papelería y regalos | milestone | 0d | 2009-07-28 09:00 | 2009-07-28 09:00 | 69, 75, 81 | 2009-07-28 09:00 | 2009-07-28 09:00 | 0d | 20d |  | start no earlier than 2009-07-28 09:00 |  | Organizador |  |  |  |
| 84 | 7 | **Orquesta y música** |  | 16.25d | 2009-07-10 17:00 | 2009-07-31 09:00 |  | 2009-07-10 17:00 | 2009-07-31 09:00 | 15.25d | 17d |  |  |  |  | 56h | 550 | 550 |
| 85 | 7.1 | **Música ceremonia** |  | 13d | 2009-07-13 09:00 | 2009-07-28 09:00 |  | 2009-07-13 09:00 | 2009-07-28 09:00 | 12d | 20d |  |  |  |  | 17h | 215 | 215 |
| 86 | 7.1.1 | Concertar cita previa |  | 1h | 2009-07-13 09:00 | 2009-07-13 10:00 |  | 2009-07-13 09:00 | 2009-07-13 10:00 | 1h | 26.88d | 0.75d |  |  | Organizador | 1h | 35 | 35 |
| 87 | 7.1.2 | Selección repertorio |  | 1.12d | 2009-07-17 19:00 | 2009-07-20 21:00 | 86 | 2009-07-17 19:00 | 2009-07-20 21:00 | 1.12d | 25d | 0d |  |  | Novia; Novio | 16h |  |  |
| 88 | 7.1.3 | Firma contrato música ceremonia | milestone | 0d | 2009-07-20 21:00 | 2009-07-20 21:00 | 87 | 2009-07-20 21:00 | 2009-07-20 21:00 | 0d | 25d | 4d |  |  | Organizador |  |  |  |
| 89 | 7.1.4 | Actuación día boda |  | 8h | 2009-07-25 09:00 | 2009-07-25 19:00 | 88 | 2009-07-25 09:00 | 2009-07-25 19:00 | 8h | 21d | 0d | start no earlier than 2009-07-25 09:00 |  | Música ceremonia |  | 180 | 180 |
| 90 | 7.1.5 | Actuación completa | milestone | 0d | 2009-07-25 19:00 | 2009-07-25 19:00 | 89 |  |  |  | 21d | 1d |  |  |  |  |  |  |
| 91 | 7.1.6 | Pago y Cierre contrato grupo | milestone | 0d | 2009-07-28 09:00 | 2009-07-28 09:00 | 90 | 2009-07-28 09:00 | 2009-07-28 09:00 | 0d | 20d |  | start no earlier than 2009-07-28 09:00 |  | Organizador |  |  |  |

| ID | WBS | Task | Type | Duration | Start | Finish | Predecessors | Baseline start | Baseline finish | Baseline duration | Total slack | Free slack | Constraint | Resources | Work | Cost | Baseline cost |
| --- | --- | --- | --- | --- | --- | --- | --- | --- | --- | --- | --- | --- | --- | --- | --- | --- | --- |
| 92 | 7.2 | **Música banquete** |  | 16.25d | 2009-07-10 17:00 | 2009-07-31 09:00 |  | 2009-07-10 17:00 | 2009-07-31 09:00 | 15.25d | 17d |  |  |  | 39h | 335 | 335 |
| 93 | 7.2.1 | Concertar cita previa |  | 1h | 2009-07-10 17:00 | 2009-07-10 18:00 |  | 2009-07-10 17:00 | 2009-07-10 18:00 | 1h | 27.12d | 0d |  | Organizador | 1h | 35 | 35 |
| 94 | 7.2.2 | Selección tipo música |  | 2.12d | 2009-07-11 09:00 | 2009-07-17 20:00 | 93 | 2009-07-11 09:00 | 2009-07-17 20:00 | 2.12d | 27d | 0d |  | Novio; Novia | 32h |  |  |
| 95 | 7.2.3 | Firma contrato música banquete | milestone | 0d | 2009-07-17 20:00 | 2009-07-17 20:00 | 94 | 2009-07-17 20:00 | 2009-07-17 20:00 | 0d | 27.25d | 6d |  | Organizador |  |  |  |
| 96 | 7.2.4 | Actuación día boda |  | 6h | 2009-07-25 09:00 | 2009-07-25 17:00 | 95 | 2009-07-25 09:00 | 2009-07-25 17:00 | 6h | 21.25d | 0d | start no earlier than 2009-07-25 09:00 | Música banquete | 6h | 300 | 300 |
| 97 | 7.2.5 | Actuación concluida | milestone | 0d | 2009-07-25 17:00 | 2009-07-25 17:00 | 96 |  |  |  | 21.25d | 4.25d |  |  |  |  |  |
| 98 | 7.2.6 | Pago y Cierre contrato música | milestone | 0d | 2009-07-31 09:00 | 2009-07-31 09:00 | 97 | 2009-07-31 09:00 | 2009-07-31 09:00 | 0d | 17d |  | start no earlier than 2009-07-31 09:00 | Organizador |  |  |  |
| 99 | 8 | **Transporte** |  | 15.62d | 2009-07-13 12:00 | 2009-07-31 09:00 |  | 2009-07-13 12:00 | 2009-07-31 09:00 | 14.62d | 17d |  |  |  | 17h | 1,090 | 1,090 |
| 100 | 8.1 | **Transporte novios** |  | 15.62d | 2009-07-13 12:00 | 2009-07-31 09:00 |  | 2009-07-13 12:00 | 2009-07-31 09:00 | 14.62d | 17d |  |  |  | 5h | 635 | 635 |
| 101 | 8.1.1 | Concertar cita previa |  | 1h | 2009-07-13 12:00 | 2009-07-13 13:00 |  | 2009-07-13 12:00 | 2009-07-13 13:00 | 1h | 25.12d | 0.38d |  | Organizador | 1h | 35 | 35 |
| 102 | 8.1.2 | Selección del tipo de transporte |  | 3h | 2009-07-20 20:00 | 2009-07-21 20:00 | 101 | 2009-07-20 20:00 | 2009-07-21 20:00 | 3h | 23d | 0d |  | Novio; Novia | 4h |  |  |
| 103 | 8.1.3 | Firma contrato | milestone | 0d | 2009-07-21 20:00 | 2009-07-21 20:00 | 102 | 2009-07-21 20:00 | 2009-07-21 20:00 | 0d | 23.75d | 3d |  | Organizador |  |  |  |
| 104 | 8.1.4 | Desplazamiento de los novios iglesia |  | 8h | 2009-07-25 09:00 | 2009-07-25 19:00 | 103 | 2009-07-25 09:00 | 2009-07-25 19:00 | 8h | 20.75d | 0d | start no earlier than 2009-07-25 09:00 | Alquiler vehículo novios |  | 300 | 300 |
| 105 | 8.1.5 | Servicio desplazamiento concluido | milestone | 0d | 2009-07-25 19:00 | 2009-07-25 19:00 | 104 |  |  |  | 20.75d | 0d |  |  |  |  |  |
| 106 | 8.1.6 | Desplazamiento novios hotel noche bodas |  | 2h | 2009-07-27 09:00 | 2009-07-27 11:00 | 105 | 2009-07-27 09:00 | 2009-07-27 11:00 | 2h | 20.75d | 0d |  | Alquiler vehículo novios |  | 300 | 300 |
| 107 | 8.1.7 | Servicio desplazamiento concluido | milestone | 0d | 2009-07-27 11:00 | 2009-07-27 11:00 | 106 |  |  |  | 20.75d | 3.75d |  |  |  |  |  |
| 108 | 8.1.8 | Pago y Cierre del contrato | milestone | 0d | 2009-07-31 09:00 | 2009-07-31 09:00 | 107 | 2009-07-31 09:00 | 2009-07-31 09:00 | 0d | 17d |  | start no earlier than 2009-07-31 09:00 | Organizador |  |  |  |
| 109 | 8.2 | **Transporte invitados** |  | 15.5d | 2009-07-13 15:00 | 2009-07-31 09:00 |  | 2009-07-13 15:00 | 2009-07-31 09:00 | 14.5d | 17d |  |  |  | 12h | 455 | 455 |
| 110 | 8.2.1 | Concertar cita previa |  | 1h | 2009-07-13 15:00 | 2009-07-13 16:00 |  | 2009-07-13 15:00 | 2009-07-13 16:00 | 1h | 31.25d | 0d |  | Organizador | 1h | 35 | 35 |
| 111 | 8.2.2 | Selección del tipo de vehículo |  | 2h | 2009-07-13 16:00 | 2009-07-13 19:00 | 110 | 2009-07-13 16:00 | 2009-07-13 19:00 | 2h | 31d | 0d |  | Novia; Novio; Organizador | 3h | 35 | 35 |
| 112 | 8.2.3 | Determinación servicios a prestar |  | 1h | 2009-07-14 10:00 | 2009-07-14 11:00 | 111 | 2009-07-14 10:00 | 2009-07-14 11:00 | 1h | 30.88d | 0d |  | Organizador | 1h | 35 | 35 |
| 113 | 8.2.4 | Firma del contrato | milestone | 0d | 2009-07-14 11:00 | 2009-07-14 11:00 | 112 | 2009-07-14 11:00 | 2009-07-14 11:00 | 0d | 30.88d | 9.75d |  | Organizador |  |  |  |
| 114 | 8.2.5 | Servicio de transporte ida |  | 1h | 2009-07-25 09:00 | 2009-07-25 10:00 | 113 | 2009-07-25 09:00 | 2009-07-25 10:00 | 1h | 21.12d | 0d | start no earlier than 2009-07-25 09:00 | Alquiler vehículo invitados | 1h | 50 | 50 |
| 115 | 8.2.6 | Servicio transporte vuelta 1 |  | 3h | 2009-07-25 10:00 | 2009-07-25 13:00 | 114 | 2009-07-25 10:00 | 2009-07-25 13:00 | 3h | 21.12d | 0d | start no earlier than 2009-07-25 09:00 | Alquiler vehículo invitados | 3h | 150 | 150 |
| 116 | 8.2.7 | Servicio transporte vuelta 2 |  | 3h | 2009-07-25 15:00 | 2009-07-25 18:00 | 115 | 2009-07-25 15:00 | 2009-07-25 18:00 | 3h | 21.12d | 0d | start no earlier than 2009-07-25 09:00 | Alquiler vehículo invitados | 3h | 150 | 150 |
| 117 | 8.2.8 | Servicios transporte concluido | milestone | 0d | 2009-07-25 18:00 | 2009-07-25 18:00 | 116 |  |  |  | 21.12d | 4.12d |  |  |  |  |  |
| 118 | 8.2.9 | Pago y Cierre de contrato | milestone | 0d | 2009-07-31 09:00 | 2009-07-31 09:00 | 117 | 2009-07-31 09:00 | 2009-07-31 09:00 | 0d | 17d |  | start no earlier than 2009-07-31 09:00 | Organizador |  |  |  |

| ID | WBS | Task | Type | Duration | Start | Finish | Predecessors | Baseline start | Baseline finish | Baseline duration | Total slack | Free slack | Constraint | Deadline | Resources | Work | Cost | Baseline cost |
| --- | --- | --- | --- | --- | --- | --- | --- | --- | --- | --- | --- | --- | --- | --- | --- | --- | --- | --- |
| 119 | 9 | **Trámites administrativos** |  | 41.75d | 2009-06-02 11:00 | 2009-07-27 19:00 |  | 2009-06-02 11:00 | 2009-07-27 19:00 | 40.75d | 20d |  |  |  |  | 213h | 5,730 | 5,730 |
| 120 | 9.1 | **Iglesia** |  | 41.75d | 2009-06-02 11:00 | 2009-07-27 19:00 |  | 2009-06-02 11:00 | 2009-07-27 19:00 | 40.75d | 20d |  |  |  |  | 181h | 3,255 | 3,255 |
| 121 | 9.1.1 | Concertar cita previa párroco |  | 1h | 2009-06-02 11:00 | 2009-06-02 12:00 |  | 2009-06-02 11:00 | 2009-06-02 12:00 | 1h | 21.5d | 0d |  |  | Organizador | 1h | 35 | 35 |
| 122 | 9.1.2 | Reserva fecha boda |  | 1h | 2009-06-02 12:00 | 2009-06-02 13:00 | 121 | 2009-06-02 12:00 | 2009-06-02 13:00 | 1h | 21.5d | 0d |  |  | Organizador | 1h | 35 | 35 |
| 123 | 9.1.3 | Selección fechas cursos prematrimoniales |  | 2h | 2009-06-02 15:00 | 2009-06-02 19:00 | 122 | 2009-06-02 15:00 | 2009-06-02 19:00 | 2h | 21.5d | 17.88d |  |  | Novio; Novia; Organizador | 3h | 35 | 35 |
| 124 | 9.1.4 | Obtención certificados bautismo |  | 10d | 2009-06-03 12:00 | 2009-06-17 17:00 | 121 | 2009-06-03 12:00 | 2009-06-17 17:00 | 10d | 22.12d | 0d |  |  | Organizador | 80h | 2,800 | 2,800 |
| 125 | 9.1.5 | Certificados entregados | milestone | 0d | 2009-06-17 17:00 | 2009-06-17 17:00 | 124 |  |  |  | 22.12d | 17.25d |  |  |  |  |  |  |
| 126 | 9.1.6 | Realización cursos prematrimoniales |  | 5.12d | 2009-06-26 18:00 | 2009-07-10 21:00 | 123 | 2009-06-26 18:00 | 2009-07-10 21:00 | 5.12d | 4d | 0d | start no earlier than 2009-06-26 09:00 |  | Novio; Novia | 80h |  |  |
| 127 | 9.1.7 | Entrega certificados |  | 1h | 2009-07-13 09:00 | 2009-07-13 10:00 | 126, 125 | 2009-07-13 09:00 | 2009-07-13 10:00 | 1h | 4.88d | 0d |  | 2009-07-17 19:00 |  |  |  |  |
| 128 | 9.1.8 | Certificado curso prematrimoniales | milestone | 0d | 2009-07-13 10:00 | 2009-07-13 10:00 | 127 |  |  |  | 32.88d |  |  |  |  |  |  |  |
| 129 | 9.1.9 | Limpieza iglesia |  | 8h | 2009-07-24 09:00 | 2009-07-24 19:00 | 122 | 2009-07-24 09:00 | 2009-07-24 19:00 | 8h | 20.75d | 0d | start no earlier than 2009-07-24 09:00 |  | Servicio limpieza | 8h | 160 | 160 |
| 130 | 9.1.10 | Celebración ceremonia |  | 2h | 2009-07-25 09:00 | 2009-07-25 11:00 | 129 | 2009-07-25 09:00 | 2009-07-25 11:00 | 2h | 20.75d | 0.75d |  |  | Ceremonia |  | 30 | 30 |
| 131 | 9.1.11 | Recogida y limpieza iglesia |  | 8h | 2009-07-27 09:00 | 2009-07-27 19:00 | 130 | 2009-07-27 09:00 | 2009-07-27 19:00 | 8h | 20d | 0d | start no earlier than 2009-07-26 09:00 |  | Servicio limpieza | 8h | 160 | 160 |
| 132 | 9.1.12 | Iglesia recogida | milestone | 0d | 2009-07-27 19:00 | 2009-07-27 19:00 | 131 | 2009-07-27 19:00 | 2009-07-27 19:00 | 0d | 20d |  |  |  |  |  |  |  |
| 133 | 9.2 | **Recinto banquete** |  | 29.88d | 2009-06-17 17:00 | 2009-07-27 16:00 |  | 2009-06-17 17:00 | 2009-07-27 16:00 | 28.88d | 20.38d |  |  |  |  | 32h | 2,475 | 2,475 |
| 134 | 9.2.1 | Cita previa ayuntamiento |  | 1h | 2009-06-17 17:00 | 2009-06-17 18:00 |  | 2009-06-17 17:00 | 2009-06-17 18:00 | 1h | 23.75d | 0d |  |  | Organizador | 1h | 35 | 35 |
| 135 | 9.2.2 | Obtención permiso celebración evento |  | 2d | 2009-06-17 18:00 | 2009-06-19 18:00 | 134 | 2009-06-17 18:00 | 2009-06-19 18:00 | 2d | 23.75d | 0d |  |  | Organizador; Licencia ayuntamiento | 16h | 590 | 590 |
| 136 | 9.2.3 | Firma contrato uso recinto | milestone | 0d | 2009-06-19 18:00 | 2009-06-19 18:00 | 135 | 2009-06-19 18:00 | 2009-06-19 18:00 | 0d | 23.75d | 0d |  |  | Organizador |  |  |  |
| 137 | 9.2.4 | Cita previa proveedor carpa |  | 1h | 2009-06-19 18:00 | 2009-06-19 19:00 | 136 | 2009-06-19 18:00 | 2009-06-19 19:00 | 1h | 23.75d | 0d |  |  | Organizador | 1h | 35 | 35 |
| 138 | 9.2.5 | Selección carpa |  | 1h | 2009-06-22 10:00 | 2009-06-22 11:00 | 137 | 2009-06-22 10:00 | 2009-06-22 11:00 | 1h | 23.75d | 0d |  |  | Organizador | 1h | 35 | 35 |
| 139 | 9.2.6 | Firma contrato proveedor carpa | milestone | 0d | 2009-06-22 11:00 | 2009-06-22 11:00 | 138 | 2009-06-22 11:00 | 2009-06-22 11:00 | 0d | 23.75d | 24.75d |  | 2009-07-22 19:00 | Organizador |  |  |  |
| 140 | 9.2.7 | Instalación carpa |  | 8h | 2009-07-24 09:00 | 2009-07-24 19:00 | 139 | 2009-07-24 09:00 | 2009-07-24 19:00 | 8h | 20.38d | 0d | start no earlier than 2009-07-24 09:00 |  | Montaje carpa | 8h | 480 | 480 |
| 141 | 9.2.8 | Carpa instalada | milestone | 0d | 2009-07-24 19:00 | 2009-07-24 19:00 | 140 |  |  |  | 20.38d | 0d |  |  |  |  |  |  |
| 142 | 9.2.9 | Celebración evento |  | 8h | 2009-07-25 09:00 | 2009-07-25 19:00 | 141 | 2009-07-25 09:00 | 2009-07-25 19:00 | 8h | 20.38d | 0d |  |  | Alquiler carpa |  | 1,000 | 1,000 |
| 143 | 9.2.10 | Retirada carpa |  | 5h | 2009-07-27 09:00 | 2009-07-27 16:00 | 142 | 2009-07-27 09:00 | 2009-07-27 16:00 | 5h | 20.38d | 0d |  |  | Montaje carpa | 5h | 300 | 300 |
| 144 | 9.2.11 | Carpa retirada | milestone | 0d | 2009-07-27 16:00 | 2009-07-27 16:00 | 143 |  |  |  | 20.38d | 0d |  |  |  |  |  |  |
| 145 | 9.2.12 | Cierre contrato ayuntamiento | milestone | 0d | 2009-07-27 16:00 | 2009-07-27 16:00 | 144 | 2009-07-27 16:00 | 2009-07-27 16:00 | 0d | 20.38d |  |  |  | Organizador |  |  |  |
| 146 | 9.2.13 | Cierre contrato proveedor carpa | milestone | 0d | 2009-07-27 16:00 | 2009-07-27 16:00 | 143 | 2009-07-27 16:00 | 2009-07-27 16:00 | 0d | 20.38d |  |  |  | Organizador |  |  |  |

| ID | WBS | Task | Type | Duration | Start | Finish | Predecessors | Baseline start | Baseline finish | Baseline duration | Total slack | Free slack | Constraint | Deadline | Resources | Work | Cost | Baseline cost |
| --- | --- | --- | --- | --- | --- | --- | --- | --- | --- | --- | --- | --- | --- | --- | --- | --- | --- | --- |
| 147 | 10 | **Organización banquete** |  | 44.12d | 2009-06-02 18:00 | 2009-07-31 09:00 |  | 2009-06-02 18:00 | 2009-07-31 09:00 | 43.12d | 17d |  |  |  |  | 48h | 9,310 | 9,310 |
| 148 | 10.1 | Concerta cita previa restaurador |  | 1h | 2009-06-02 18:00 | 2009-06-02 19:00 |  | 2009-06-02 18:00 | 2009-06-02 19:00 | 1h | 18d | 0d |  |  | Organizador | 1h | 35 | 35 |
| 149 | 10.2 | Selección menú boda |  | 2.12d | 2009-06-12 18:00 | 2009-06-18 19:00 | 148 | 2009-06-12 18:00 | 2009-06-18 19:00 | 2.12d | 17d | 0d |  |  | Novia; Novio | 32h |  |  |
| 150 | 10.3 | Prueba menú boda |  | 4h | 2009-06-18 19:00 | 2009-06-19 20:00 | 149 | 2009-06-18 19:00 | 2009-06-19 20:00 | 4h | 17.88d | 0d |  |  | Novio; Novia | 6h |  |  |
| 151 | 10.4 | Firma contrato restaurante | milestone | 0d | 2009-06-19 20:00 | 2009-06-19 20:00 | 150 | 2009-06-19 20:00 | 2009-06-19 20:00 | 0d | 18d |  |  | 2009-07-15 19:00 | Organizador |  |  |  |
| 152 | 10.5 | Selección servicio catering |  | 1h | 2009-06-03 11:00 | 2009-06-03 12:00 |  | 2009-06-03 11:00 | 2009-06-03 12:00 | 1h | 30.62d | 0d |  |  | Organizador | 1h | 35 | 35 |
| 153 | 10.6 | Firma contrato catering | milestone | 0d | 2009-06-03 12:00 | 2009-06-03 12:00 | 152 | 2009-06-03 12:00 | 2009-06-03 12:00 | 0d | 30.62d | 38.62d |  | 2009-07-15 19:00 | Organizador |  |  |  |
| 154 | 10.7 | Servicio restaurante boda |  | 8h | 2009-07-25 09:00 | 2009-07-25 19:00 | 151 | 2009-07-25 09:00 | 2009-07-25 19:00 | 8h | 21d | 0d | start no earlier than 2009-07-25 09:00 |  | Menu elegido [10000%] |  | 9,000 | 9,000 |
| 155 | 10.8 | Servicio catering boda |  | 8h | 2009-07-25 09:00 | 2009-07-25 19:00 | 153 | 2009-07-25 09:00 | 2009-07-25 19:00 | 8h | 21d | 0d | start no earlier than 2009-07-25 09:00 |  | Servicio Catering | 8h | 240 | 240 |
| 156 | 10.9 | Servicios catering y restaurante | milestone | 0d | 2009-07-25 19:00 | 2009-07-25 19:00 | 154, 155 |  |  |  | 21d | 4d | start no earlier than 2009-07-25 09:00 |  |  |  |  |  |
| 157 | 10.10 | Pago y Cierre contrato restaurante | milestone | 0d | 2009-07-31 09:00 | 2009-07-31 09:00 | 156 | 2009-07-31 09:00 | 2009-07-31 09:00 | 0d | 17d |  | start no earlier than 2009-07-31 09:00 |  | Organizador |  |  |  |
| 158 | 10.11 | Pago y Cierre contrato catering | milestone | 0d | 2009-07-31 09:00 | 2009-07-31 09:00 | 156 | 2009-07-31 09:00 | 2009-07-31 09:00 | 0d | 17d |  | start no earlier than 2009-07-31 09:00 |  | Organizador |  |  |  |
| 159 | 11 | **Noche de bodas** |  | 31d | 2009-06-20 10:00 | 2009-07-31 09:00 |  | 2009-06-20 10:00 | 2009-07-31 09:00 | 30d | 17d |  |  |  |  | 6h | 470 | 470 |
| 160 | 11.1 | Selección destino noche bodas |  | 1h | 2009-06-20 10:00 | 2009-06-20 11:00 |  | 2009-06-20 10:00 | 2009-06-20 11:00 | 1h | 23d | 0d |  |  | Novio; Novia | 2h |  |  |
| 161 | 11.2 | Selección hotel |  | 2h | 2009-06-20 11:00 | 2009-06-22 10:00 | 160 | 2009-06-20 11:00 | 2009-06-22 10:00 | 2h | 23d | 0d |  |  | Novio; Novia; Organizador | 3h | 35 | 35 |
| 162 | 11.3 | Reserva hotel |  | 1h | 2009-06-22 11:00 | 2009-06-22 12:00 | 161 | 2009-06-22 11:00 | 2009-06-22 12:00 | 1h | 23.62d | 0d |  |  | Organizador | 1h | 35 | 35 |
| 163 | 11.4 | Firma contrato hotel | milestone | 0d | 2009-06-22 12:00 | 2009-06-22 12:00 | 162 | 2009-06-22 12:00 | 2009-06-22 12:00 | 0d | 23.62d | 24.62d |  | 2009-07-22 19:00 | Organizador |  |  |  |
| 164 | 11.5 | Noche de bodas hotel |  | 2d | 2009-07-24 09:00 | 2009-07-26 19:00 | 163 | 2009-07-24 09:00 | 2009-07-26 19:00 | 2d | 21d | 0d | finish no earlier than 2009-07-26 19:00 |  | Reserva hotel |  | 400 | 400 |
| 165 | 11.6 | Noche de bodas disfrutada | milestone | 0d | 2009-07-26 19:00 | 2009-07-26 19:00 | 164 |  |  |  | 21d | 4d |  |  |  |  |  |  |
| 166 | 11.7 | Cierre contrato hotel | milestone | 0d | 2009-07-31 09:00 | 2009-07-31 09:00 | 165 | 2009-07-31 09:00 | 2009-07-31 09:00 | 0d | 17d |  | start no earlier than 2009-07-31 09:00 |  | Organizador |  |  |  |
| 167 | 12 | **Reuniones de seguimiento** |  | 52.12d | 2009-06-02 09:00 | 2009-08-11 10:00 |  | 2009-06-02 09:00 | 2009-08-11 10:00 | 51.12d | 9.88d |  |  |  |  | 11h | 385 | 385 |
| 168 | 12.1 | Reuniones de seguimiento 1 |  | 1h | 2009-06-02 09:00 | 2009-06-02 10:00 |  | 2009-06-02 09:00 | 2009-06-02 10:00 | 1h | 61.88d |  | start no earlier than 2009-06-02 09:00 |  | Organizador; Novia; Novio | 1h | 35 | 35 |
| 169 | 12.2 | Reuniones de seguimiento 2 |  | 1h | 2009-06-09 09:00 | 2009-06-09 10:00 |  | 2009-06-09 09:00 | 2009-06-09 10:00 | 1h | 56.88d |  | start no earlier than 2009-06-09 09:00 |  | Organizador; Novia; Novio | 1h | 35 | 35 |
| 170 | 12.3 | Reuniones de seguimiento 3 |  | 1h | 2009-06-16 09:00 | 2009-06-16 10:00 |  | 2009-06-16 09:00 | 2009-06-16 10:00 | 1h | 51.88d |  | start no earlier than 2009-06-16 09:00 |  | Organizador; Novia; Novio | 1h | 35 | 35 |
| 171 | 12.4 | Reuniones de seguimiento 4 |  | 1h | 2009-06-23 09:00 | 2009-06-23 10:00 |  | 2009-06-23 09:00 | 2009-06-23 10:00 | 1h | 46.88d |  | start no earlier than 2009-06-23 09:00 |  | Organizador; Novia; Novio | 1h | 35 | 35 |
| 172 | 12.5 | Reuniones de seguimiento 5 |  | 1h | 2009-06-30 09:00 | 2009-06-30 10:00 |  | 2009-06-30 09:00 | 2009-06-30 10:00 | 1h | 41.88d |  | start no earlier than 2009-06-30 09:00 |  | Organizador; Novia; Novio | 1h | 35 | 35 |
| 173 | 12.6 | Reuniones de seguimiento 6 |  | 1h | 2009-07-07 09:00 | 2009-07-07 10:00 |  | 2009-07-07 09:00 | 2009-07-07 10:00 | 1h | 36.88d |  | start no earlier than 2009-07-07 09:00 |  | Organizador; Novia; Novio | 1h | 35 | 35 |
| 174 | 12.7 | Reuniones de seguimiento 7 |  | 1h | 2009-07-14 09:00 | 2009-07-14 10:00 |  | 2009-07-14 09:00 | 2009-07-14 10:00 | 1h | 31.88d |  | start no earlier than 2009-07-14 09:00 |  | Organizador; Novia; Novio | 1h | 35 | 35 |
| 175 | 12.8 | Reuniones de seguimiento 8 |  | 1h | 2009-07-21 09:00 | 2009-07-21 10:00 |  | 2009-07-21 09:00 | 2009-07-21 10:00 | 1h | 25.88d |  | start no earlier than 2009-07-21 09:00 |  | Organizador; Novia; Novio | 1h | 35 | 35 |
| 176 | 12.9 | Reuniones de seguimiento 9 |  | 1h | 2009-07-28 09:00 | 2009-07-28 10:00 |  | 2009-07-28 09:00 | 2009-07-28 10:00 | 1h | 19.88d |  | start no earlier than 2009-07-28 09:00 |  | Organizador; Novia; Novio | 1h | 35 | 35 |
| 177 | 12.10 | Reuniones de seguimiento 10 |  | 1h | 2009-08-04 09:00 | 2009-08-04 10:00 |  | 2009-08-04 09:00 | 2009-08-04 10:00 | 1h | 14.88d |  | start no earlier than 2009-08-04 09:00 |  | Organizador; Novia; Novio | 1h | 35 | 35 |
| 178 | 12.11 | Reuniones de seguimiento 11 |  | 1h | 2009-08-11 09:00 | 2009-08-11 10:00 |  | 2009-08-11 09:00 | 2009-08-11 10:00 | 1h | 9.88d |  | start no earlier than 2009-08-11 09:00 |  | Organizador; Novia; Novio | 1h | 35 | 35 |

| ID | WBS | Task | Type | Duration | Start | Finish | Predecessors | Total slack | Free slack | Constraint |
| --- | --- | --- | --- | --- | --- | --- | --- | --- | --- | --- |
| 179 | 13 | **Cobro al cliente** |  | 62d | 2009-06-02 09:00 | 2009-08-25 09:00 |  | 0d |  |  |
| 180 | 13.1 | Entrega primer plazo | milestone | 0d | 2009-06-02 09:00 | 2009-06-02 09:00 |  | 62d | 34d |  |
| 181 | 13.2 | Entrega segundo plazo | milestone | 0d | 2009-07-18 09:00 | 2009-07-18 09:00 | 180 | 28d |  | start no earlier than 2009-07-18 09:00 |
| 182 | 13.3 | Entrega tercer plazo | milestone | 0d | 2009-08-25 09:00 | 2009-08-25 09:00 | 181 | 0d |  | start no earlier than 2009-08-25 09:00 |
| 183 | 13.4 | Cierre contrato cliente | milestone | 0d | 2009-08-25 09:00 | 2009-08-25 09:00 | 182 | 0d |  |  |
