# Comercial Juguetes Wingtip

Schedule from MS Project, 2005-01-03 to 2005-01-31, status date 2005-01-10, costs in €, A marks actual dates.
Southridge Video

## Calendars

- Estándar: Mon-Fri 08:00-12:00, 13:00-17:00; Sat-Sun off.

## Resources

| Resource | Unit | Rate | Notes |
| --- | --- | --- | --- |
| Garrett R. Vargas |  | 20 | Asistencia de Garret al Festival cinematográfico de la Costa Oeste los días 13 y 14 de enero; no estará disponible para trabajar en el proyecto. |
| Jim Hance |  | 18.75 |  |
| Scott Cooper |  | 19.37 |  |
| Jo Brown |  | 18.75 |  |
| Patti Mintz |  | 9.4 |  |
| Peter Kelly |  | 16.75 |  |
| John Rodman |  | 22 |  |
| Jonathan Mollerup |  | 10 |  |
| Jon Ganio |  | 15.5 |  |
| Electricista |  | 22 |  |
| Cámara de grabación Mini-DV |  | 6.25 |  |
| 600 vatios de luz y sonido |  | 2.5 |  |
| Kit reflector |  |  |  |
| Cámara Boom |  |  |  |
| Laboratorio Edición |  | 25 |  |
| Cinta de video | Cintas de 30-min | 5 |  |

## Schedule

| ID | WBS | Task | Type | Duration | Start | Finish | Predecessors | Complete | Remaining | Baseline start | Baseline finish | Baseline duration | Total slack | Free slack | Resources | Work | Actual work | Cost | Baseline cost | Actual cost |
| --- | --- | --- | --- | --- | --- | --- | --- | --- | --- | --- | --- | --- | --- | --- | --- | --- | --- | --- | --- | --- |
| 1 | 1 | **Preproducción** |  | 9d | 2005-01-03 A | 2005-01-13 |  | 99% | 0d | 2005-01-03 | 2005-01-13 | 8.5d | 7d | 1d |  | 184h | 184h | 2,853.8 | 2,631.7 | 2,853.8 |
| 2 | 1.1 | Revisar guión |  | 2.5d | 2005-01-03 A | 2005-01-05 A |  | 100% |  | 2005-01-03 | 2005-01-05 | 2.5d |  |  | Garrett R. Vargas; Scott Cooper | 40h | 40h | 787.5 | 787.5 | 787.5 |
| 3 | 1.2 | Reunir personal de producción |  | 3d | 2005-01-05 A | 2005-01-10 A | 2 | 100% |  | 2005-01-05 | 2005-01-10 | 3d |  |  | Garrett R. Vargas; Patti Mintz | 48h | 48h | 705.6 | 705.6 | 705.6 |
| 4 | 1.3 | Elegir lugares |  | 1d | 2005-01-10 A | 2005-01-11 A | 3 | 100% |  | 2005-01-10 | 2005-01-11 | 1d |  |  | Scott Cooper; Patti Mintz; Cinta de video [4 Cintas de 30-min] | 16h | 16h | 250.2 | 250.2 | 250.2 |
| 5 | 1.4 | Realizar audiciones |  | 2.5d | 2005-01-11 A | 2005-01-13 A | 4 | 100% |  | 2005-01-11 | 2005-01-13 | 2d |  |  | Peter Kelly; Scott Cooper; Jonathan Mollerup; Patti Mintz | 80h | 80h | 1,110.5 | 888.4 | 1,110.5 |
| 6 | 1.5 | ¡Preproducción completada! | milestone | 0d | 2005-01-13 | 2005-01-13 | 5 |  |  | 2005-01-13 | 2005-01-13 | 0d | 7d |  |  |  |  |  |  |  |
| 7 | 2 | **Producción** |  | 7d | 2005-01-17 A | 2005-01-25 | 1 | 86% | 1d | 2005-01-13 | 2005-01-19 | 4.5d | 0d |  |  | 537h | 521h | 5,138.35 | 4,476.7 | 4,788.35 |
| 8 | 2.1 | Ensayos |  | 3d | 2005-01-17 A | 2005-01-19 A |  | 100% |  | 2005-01-13 | 2005-01-17 | 2.25d |  |  | Garrett R. Vargas; Jim Hance; Scott Cooper; Patti Mintz; Peter Kelly; Jon Ganio [50%]; John Rodman; 600 vatios de luz y sonido [400%]; Cámara Boom [200%]; Cámara de grabación Mini-DV; Kit reflector; Cinta de video [1 Cintas de 30-min] | 289h | 289h | 2,247.05 | 1,717.4 | 2,247.05 |
| 9 | 2.2 | Proyección del video |  | 3d | 2005-01-19 A | 2005-01-24 A | 8FS-5% | 100% |  | 2005-01-17 | 2005-01-18 | 2d |  |  | Garrett R. Vargas; Jim Hance; Scott Cooper; Patti Mintz; Peter Kelly; Jon Ganio [50%]; John Rodman; 600 vatios de luz y sonido [400%]; Cámara Boom [200%]; Cámara de grabación Mini-DV [300%]; Kit reflector; Cinta de video [16 Cintas de 30-min]; Electricista [200%] | 232h | 232h | 2,541.3 | 2,409.3 | 2,541.3 |
| 10 | 2.3 | Montaje de película |  | 1d | 2005-01-25 | 2005-01-25 | 9 |  |  | 2005-01-19 | 2005-01-19 | 1d | 0d |  | Jo Brown; Laboratorio Edición | 16h |  | 350 | 350 |  |
| 11 | 2.4 | ¡Producción completada! | milestone | 0d | 2005-01-25 | 2005-01-25 | 10 |  |  | 2005-01-19 | 2005-01-19 | 0d | 0d |  |  |  |  |  |  |  |
| 12 | 3 | **Postproducción** |  | 3.5d | 2005-01-26 | 2005-01-31 | 7 |  |  | 2005-01-20 | 2005-01-25 | 3.5d | 0d |  |  | 76h |  | 1,563 | 1,563 |  |
| 13 | 3.1 | Montaje |  | 2d | 2005-01-26 | 2005-01-27 |  |  |  | 2005-01-20 | 2005-01-21 | 2d | 0d |  | Laboratorio Edición; Scott Cooper; Peter Kelly | 48h |  | 978 | 978 |  |
| 14 | 3.2 | Añadir sonido final |  | 1d | 2005-01-28 | 2005-01-28 | 13 |  |  | 2005-01-24 | 2005-01-24 | 1d | 0d |  | Laboratorio Edición; Jo Brown; Scott Cooper | 24h |  | 505 | 505 |  |
| 15 | 3.3 | Copia final para el cliente |  | 4h | 2005-01-31 | 2005-01-31 | 14 |  |  | 2005-01-25 | 2005-01-25 | 4h | 0d |  | Garrett R. Vargas | 4h |  | 80 | 80 |  |

Notes:
- 4: Incluye escenarios de exteriores y escenarios de estudio interiores.
